# WBSCardenas-Torres

Schedule from MS Project, 2011-12-27 to 2012-05-18, 6 hours a day, costs in Bs. F..

## Calendars

- Standard: Mon-Fri 08:00-12:00, 13:00-17:00; Sat-Sun off.

## Resources

| Resource | Group | Rate |
| --- | --- | --- |
| Luis Alfaro | Estadista | 19 |
| Luis Laurenco | Estadista | 19 |
| Francisco Tiapa | Estadista | 19 |
| Daniel Conde | Estadista | 19 |
| Johan Colina | Estadista | 19 |
| Jesús Miranda | Estadista | 19 |
| Hector Torres | Gerente de Proyecto | 68 |
| Solsire Torres | Analista de Sistemas | 38 |
| Ignacio Cardenas | Desarrollador de Software | 43 |
| Jessica Pupillo | Desarrollador de Software | 43 |
| Jorge Pires | Desarrollador de Software | 43 |
| Patricia Figueira | Abogado | 5 |
| Joana Pardo | Administrador | 30 |
| Wilmer Soto | Tester | 32 |
| Material de Oficina | Material de Oficina |  |

## Schedule

| ID | WBS | Task | Type | Duration | Start | Finish | Predecessors | Total slack | Resources | Work | Cost |
| --- | --- | --- | --- | --- | --- | --- | --- | --- | --- | --- | --- |
| 1 | 1 | **Mecanismo en linea para Banco Mercantil** |  | 138.04d | 2011-12-27 08:00 | 2012-05-18 13:15 |  | 0d |  | 2371.25h | 122,846 |
| 2 | 1.1 | **Gestión de Proyecto** |  | 138.04d | 2011-12-27 08:00 | 2012-05-18 13:15 |  | 0d |  | 344.25h | 17,396 |
| 3 | 1.1.1 | **Primera Etapa** |  | 13.33d | 2011-12-27 08:00 | 2012-01-09 17:00 |  | 0d |  | 80h | 5,364 |
| 4 | 1.1.1.1 | **Visualización, Conceptualización y Definición del Proyecto** |  | 13.33d | 2011-12-27 08:00 | 2012-01-09 17:00 |  | 0d |  | 80h | 5,364 |
| 5 | 1.1.1.1.1 | Reunión JD Banco Mercantil, levantamiento de requerimientos |  | 30h | 2011-12-27 08:00 | 2011-12-30 15:00 |  | 0d | Hector Torres | 30h | 2,040 |
| 6 | 1.1.1.1.2 | Definición objetivos del poyecto |  | 8h | 2011-12-30 15:00 | 2012-01-02 15:00 | 5 | 0d | Hector Torres | 8h | 544 |
| 7 | 1.1.1.1.3 | Definición Alcance del proyecto |  | 4h | 2012-01-02 15:00 | 2012-01-03 10:00 | 6 | 0d | Hector Torres | 4h | 272 |
| 8 | 1.1.1.1.4 | Diseño estrategia del proyecto |  | 4h | 2012-01-03 10:00 | 2012-01-03 15:00 | 7 | 0d | Hector Torres | 4h | 272 |
| 9 | 1.1.1.1.5 | Identificación de riesgos del proyecto |  | 3h | 2012-01-03 15:00 | 2012-01-04 09:00 | 8 | 0d | Hector Torres | 3h | 204 |
| 10 | 1.1.1.1.6 | Análisis grado de ocurrencia de riesgos |  | 1h | 2012-01-04 09:00 | 2012-01-04 10:00 | 9 | 0d | Hector Torres | 1h | 68 |
| 11 | 1.1.1.1.7 | Análisis de prevención de riesgos |  | 1h | 2012-01-04 10:00 | 2012-01-04 11:00 | 10 | 0d | Hector Torres | 1h | 68 |
| 12 | 1.1.1.1.8 | Entrega de propuesta de proyecto al Banco Mercantil | milestone | 0d | 2012-01-04 11:00 | 2012-01-04 11:00 | 11 | 0d |  |  |  |
| 13 | 1.1.1.1.9 | **Planificación de recursos a utilizar** |  | 0.17d | 2012-01-04 11:00 | 2012-01-04 12:00 | 12 | 0d |  | 1h | 68 |
| 14 | 1.1.1.1.9.1 | Elaboración lista Material de Oficina |  | 1h | 2012-01-04 11:00 | 2012-01-04 12:00 | 12 | 0d | Hector Torres | 1h | 68 |
| 15 | 1.1.1.1.10 | **Estimación de costos y recursos** |  | 0.33d | 2012-01-04 13:00 | 2012-01-04 15:00 | 13 | 0d |  | 2h | 60 |
| 16 | 1.1.1.1.10.1 | Adquirir presupuesto para material de oficina |  | 2h | 2012-01-04 13:00 | 2012-01-04 15:00 | 14 | 0d | Joana Pardo | 2h | 60 |
| 17 | 1.1.1.1.11 | **Evaluar factibilidad del proyecto** |  | 4d | 2012-01-04 15:00 | 2012-01-09 15:00 | 15 | 0d |  | 24h | 1,632 |
| 18 | 1.1.1.1.11.1 | Estudio factibilidad económica |  | 8h | 2012-01-04 15:00 | 2012-01-05 15:00 | 16 | 0d | Hector Torres | 8h | 544 |
| 19 | 1.1.1.1.11.2 | **Estudio de factibilidad de mercado** |  | 1.33d | 2012-01-05 15:00 | 2012-01-06 15:00 | 18 | 0d |  | 8h | 544 |
| 20 | 1.1.1.1.11.2.1 | Análisis de información arrojada por encuesta previa |  | 8h | 2012-01-05 15:00 | 2012-01-06 15:00 | 18 | 0d | Hector Torres | 8h | 544 |
| 21 | 1.1.1.1.11.3 | Estudio factibilidad técnica |  | 8h | 2012-01-06 15:00 | 2012-01-09 15:00 | 19 | 0d | Hector Torres | 8h | 544 |
| 22 | 1.1.1.1.12 | **Conformación del equipo de trabajo** |  | 0.33d | 2012-01-09 15:00 | 2012-01-09 17:00 | 17 | 0d |  | 2h | 136 |
| 23 | 1.1.1.1.12.1 | Establecer roles y responsabilidades de cada uno |  | 1h | 2012-01-09 15:00 | 2012-01-09 16:00 | 21 | 0d | Hector Torres | 1h | 68 |
| 24 | 1.1.1.1.12.2 | Asignar roles a empleados |  | 1h | 2012-01-09 16:00 | 2012-01-09 17:00 | 23 | 0d | Hector Torres | 1h | 68 |
| 25 | 1.1.1.2 | Finalización de la Primera Etapa | milestone | 0d | 2012-01-09 17:00 | 2012-01-09 17:00 | 24 | 0d |  |  |  |

| ID | WBS | Task | Type | Duration | Start | Finish | Predecessors | Total slack | Free slack | Resources | Work | Cost |
| --- | --- | --- | --- | --- | --- | --- | --- | --- | --- | --- | --- | --- |
| 26 | 1.1.2 | **Segunda Etapa** |  | 86.83d | 2012-01-12 08:00 | 2012-04-12 09:00 | 3FS+2.67d | 0d |  |  | 178.5h | 7,827 |
| 27 | 1.1.2.1 | **Inicio toma de medidas** |  | 0.83d | 2012-01-12 08:00 | 2012-01-12 14:00 | 126 | 0d |  |  | 35h | 910 |
| 28 | 1.1.2.1.1 | Reunión con Estadistas |  | 5h | 2012-01-12 08:00 | 2012-01-12 14:00 | 126 | 0d |  | Daniel Conde; Francisco Tiapa; Hector Torres; Johan Colina; Luis Alfaro; Luis Laurenco; Jesús Miranda | 35h | 910 |
| 29 | 1.1.2.2 | **Seguimiento y control de toma de medidas** |  | 10.83d | 2012-01-18 11:00 | 2012-01-30 12:00 | 27 | 70.17d |  |  | 12.5h | 409 |
| 30 | 1.1.2.2.1 | **Reunión con equipo de Estadistas** |  | 10.25d | 2012-01-18 11:00 | 2012-01-30 08:30 | 27 | 70.17d |  |  | 10.5h | 273 |
| 31 | 1.1.2.2.1.1 | Reunión con equipo de Estadistas 1 |  | 30min | 2012-01-18 11:00 | 2012-01-18 11:30 | 137 | 70.17d | 0d | Daniel Conde; Francisco Tiapa; Hector Torres; Johan Colina; Luis Alfaro; Luis Laurenco; Jesús Miranda | 3.5h | 91 |
| 32 | 1.1.2.2.1.2 | Generación de reporte de avance 1 | milestone | 0d | 2012-01-18 11:30 | 2012-01-18 11:30 | 31 | 70.17d | 0d |  |  |  |
| 33 | 1.1.2.2.1.3 | Reunión con equipo de Estadistas 2 |  | 30min | 2012-01-24 09:30 | 2012-01-24 10:00 | 145 | 70.17d | 0d | Daniel Conde; Francisco Tiapa; Hector Torres; Johan Colina; Luis Alfaro; Luis Laurenco; Jesús Miranda | 3.5h | 91 |
| 34 | 1.1.2.2.1.4 | Generación de reporte de avance 2 | milestone | 0d | 2012-01-24 10:00 | 2012-01-24 10:00 | 33 | 70.17d | 0d |  |  |  |
| 35 | 1.1.2.2.1.5 | Reunión con equipo de Estadistas 3 |  | 30min | 2012-01-30 08:00 | 2012-01-30 08:30 | 153 | 70.75d | 0d | Daniel Conde; Francisco Tiapa; Hector Torres; Johan Colina; Luis Alfaro; Luis Laurenco; Jesús Miranda | 3.5h | 91 |
| 36 | 1.1.2.2.1.6 | Generación de reporte de avance 3 | milestone | 0d | 2012-01-30 08:30 | 2012-01-30 08:30 | 35 | 70.75d |  |  |  |  |
| 37 | 1.1.2.2.2 | Reunión con JD Banco Mercantil |  | 2h | 2012-01-30 10:00 | 2012-01-30 12:00 | 156 | 70.17d | 0d | Hector Torres | 2h | 136 |
| 38 | 1.1.2.2.3 | Entrega Reporte Toma de Medidas | milestone | 0d | 2012-01-30 12:00 | 2012-01-30 12:00 | 37 | 70.17d |  |  |  |  |
| 39 | 1.1.2.3 | **Inicio Desarrollo del Mecanismo** |  | 1d | 2012-01-12 14:00 | 2012-01-13 11:00 | 27 | 0d |  |  | 30h | 1,410 |
| 40 | 1.1.2.3.1 | Reunión con equipo de desarrollo |  | 6h | 2012-01-12 14:00 | 2012-01-13 11:00 | 28 | 0d |  | Hector Torres; Ignacio Cardenas; Jessica Pupillo; Jorge Pires; Solsire Torres | 30h | 1,410 |
| 41 | 1.1.2.4 | **Seguimiento y control del Desarrollo del Mecanismo** |  | 79d | 2012-01-19 16:00 | 2012-04-12 09:00 | 39 | 0d |  |  | 101h | 5,098 |
| 42 | 1.1.2.4.1 | **Reunión con Equipo de Desarrollo** |  | 78.67d | 2012-01-19 16:00 | 2012-04-11 16:00 | 39 | 0d |  |  | 92h | 4,486 |
| 43 | 1.1.2.4.1.1 | Reunión con equipo de Desarrollo 1 |  | 2h | 2012-01-19 16:00 | 2012-01-20 09:00 | 163 | 0d |  | Hector Torres; Ignacio Cardenas; Jessica Pupillo; Jorge Pires; Solsire Torres | 10h | 470 |
| 44 | 1.1.2.4.1.2 | Generación de reporte, "Diseño" | milestone | 0d | 2012-01-20 09:00 | 2012-01-20 09:00 | 43 | 0d |  |  |  |  |
| 45 | 1.1.2.4.1.3 | Reunión con equipo de Desarrollo 2 |  | 2h | 2012-01-27 11:00 | 2012-01-27 14:00 | 172 | 0d |  | Hector Torres; Ignacio Cardenas; Jessica Pupillo; Jorge Pires | 8h | 394 |
| 46 | 1.1.2.4.1.4 | Generación de reporte, "Módulo Envío de Mensajes" | milestone | 0d | 2012-01-27 14:00 | 2012-01-27 14:00 | 45 | 0d |  |  |  |  |
| 47 | 1.1.2.4.1.5 | Reunión con equipo de Desarrollo 3 |  | 2h | 2012-01-30 11:00 | 2012-01-30 14:00 | 179 | 0d |  | Hector Torres; Ignacio Cardenas; Jessica Pupillo; Jorge Pires | 8h | 394 |
| 48 | 1.1.2.4.1.6 | Generación de reporte, "Módulo Historial Chat" | milestone | 0d | 2012-01-30 14:00 | 2012-01-30 14:00 | 47 | 0d |  |  |  |  |
| 49 | 1.1.2.4.1.7 | Reunión con equipo de Desarrollo 4 |  | 2h | 2012-01-31 13:00 | 2012-01-31 15:00 | 188 | 0d |  | Hector Torres; Ignacio Cardenas; Jessica Pupillo; Jorge Pires | 8h | 394 |
| 50 | 1.1.2.4.1.8 | Generación de reporte, "Módulo Encuesta" | milestone | 0d | 2012-01-31 15:00 | 2012-01-31 15:00 | 49 | 0d |  |  |  |  |
| 51 | 1.1.2.4.1.9 | Reunión con equipo de Desarrollo 5 |  | 2h | 2012-02-09 13:00 | 2012-02-09 15:00 | 194 | 0d |  | Ignacio Cardenas; Jessica Pupillo; Jorge Pires; Solsire Torres | 10h | 470 |
| 52 | 1.1.2.4.1.10 | Generación de reporte, "Diseño" | milestone | 0d | 2012-02-09 15:00 | 2012-02-09 15:00 | 51 | 0d |  |  |  |  |
| 53 | 1.1.2.4.1.11 | Reunión con equipo de Desarrollo 6 |  | 2h | 2012-02-20 11:00 | 2012-02-20 14:00 | 204 | 0d |  | Hector Torres; Ignacio Cardenas; Jessica Pupillo; Jorge Pires | 8h | 394 |
| 54 | 1.1.2.4.1.12 | Generación de reporte, "Módulo Especificación Cita" | milestone | 0d | 2012-02-20 14:00 | 2012-02-20 14:00 | 53 | 0d |  |  |  |  |
| 55 | 1.1.2.4.1.13 | Reunión con equipo de Desarrollo 7 |  | 2h | 2012-03-06 16:00 | 2012-03-07 09:00 | 214 | 0d |  | Hector Torres; Ignacio Cardenas; Jessica Pupillo; Jorge Pires | 8h | 394 |
| 56 | 1.1.2.4.1.14 | Generación de reporte, "Módulo Operaciones Cita" | milestone | 0d | 2012-03-07 09:00 | 2012-03-07 09:00 | 55 | 0d |  |  |  |  |
| 57 | 1.1.2.4.1.15 | Reunión con equipo de Desarrollo 8 |  | 2h | 2012-03-21 14:00 | 2012-03-21 16:00 | 221 | 0d |  | Hector Torres; Ignacio Cardenas; Jessica Pupillo; Jorge Pires | 8h | 394 |
| 58 | 1.1.2.4.1.16 | Generación de reporte, "Módulo Back-end" | milestone | 0d | 2012-03-21 16:00 | 2012-03-21 16:00 | 57 | 0d |  |  |  |  |
| 59 | 1.1.2.4.1.17 | Reunión con equipo de Desarrollo 9 |  | 2h | 2012-03-26 08:00 | 2012-03-26 10:00 | 234 | 0d |  | Hector Torres; Ignacio Cardenas; Jessica Pupillo; Jorge Pires | 8h | 394 |
| 60 | 1.1.2.4.1.18 | Generación de reporte, "Módulo Notificaciones" | milestone | 0d | 2012-03-26 10:00 | 2012-03-26 10:00 | 59 | 0d |  |  |  |  |
| 61 | 1.1.2.4.1.19 | Reunión con equipo de Desarrollo 10 |  | 2h | 2012-04-10 13:00 | 2012-04-10 15:00 | 244 | 0d |  | Hector Torres; Ignacio Cardenas; Jessica Pupillo; Jorge Pires | 8h | 394 |
| 62 | 1.1.2.4.1.20 | Generación de reporte, "Módulo Documentos" | milestone | 0d | 2012-04-10 15:00 | 2012-04-10 15:00 | 61 | 0d |  |  |  |  |
| 63 | 1.1.2.4.1.21 | Reunión con equipo de Desarrollo 11 |  | 2h | 2012-04-11 14:00 | 2012-04-11 16:00 | 255 | 0d |  | Hector Torres; Ignacio Cardenas; Jessica Pupillo; Jorge Pires | 8h | 394 |
| 64 | 1.1.2.4.1.22 | Generación de reporte, "Módulo Encuestas" | milestone | 0d | 2012-04-11 16:00 | 2012-04-11 16:00 | 63 | 0d |  |  |  |  |

| ID | WBS | Task | Type | Duration | Start | Finish | Predecessors | Total slack | Free slack | Resources | Work | Cost |
| --- | --- | --- | --- | --- | --- | --- | --- | --- | --- | --- | --- | --- |
| 65 | 1.1.2.4.2 | **Reunión con JD Banco Mercantil** |  | 68.5d | 2012-01-31 15:00 | 2012-04-12 09:00 | 50 | 0d |  |  | 9h | 612 |
| 66 | 1.1.2.4.2.1 | Reunión con JD Banco Mercantil 1 |  | 3h | 2012-01-31 15:00 | 2012-02-01 09:00 | 50 | 68d | 0d | Hector Torres | 3h | 204 |
| 67 | 1.1.2.4.2.2 | Entrega reporte de avances: Chat en Línea | milestone | 0h | 2012-02-01 09:00 | 2012-02-01 09:00 | 66 | 68d |  |  |  |  |
| 68 | 1.1.2.4.2.3 | Reunión con JD Banco Mercantil 2 |  | 2h | 2012-03-07 09:00 | 2012-03-07 11:00 | 56 | 34.33d | 0d | Hector Torres | 2h | 136 |
| 69 | 1.1.2.4.2.4 | Entrega reporte de avances 1: Gestión de Citas | milestone | 0d | 2012-03-07 11:00 | 2012-03-07 11:00 | 68 | 34.33d |  |  |  |  |
| 70 | 1.1.2.4.2.5 | Reunión con JD Banco Mercantil 3 |  | 2h | 2012-03-26 10:00 | 2012-03-26 12:00 | 60 | 16.83d | 0d | Hector Torres | 2h | 136 |
| 71 | 1.1.2.4.2.6 | Entrega reporte de avances 2: Gestión de Citas | milestone | 0d | 2012-03-26 12:00 | 2012-03-26 12:00 | 70 | 16.83d |  |  |  |  |
| 72 | 1.1.2.4.2.7 | Reunión con JD Banco Mercantil 4 |  | 2h | 2012-04-11 16:00 | 2012-04-12 09:00 | 64 | 0d |  | Hector Torres | 2h | 136 |
| 73 | 1.1.2.4.2.8 | Entrega reporte de avances 3: Gestión de Citas | milestone | 0d | 2012-04-12 09:00 | 2012-04-12 09:00 | 72 | 0d |  |  |  |  |
| 74 | 1.1.2.5 | Finalización de la Segunda Etapa | milestone | 0d | 2012-04-12 09:00 | 2012-04-12 09:00 | 73 | 0d |  |  |  |  |
| 75 | 1.1.3 | **Tercera Etapa** |  | 4.79d | 2012-04-12 09:00 | 2012-04-17 14:45 | 26 | 0d |  |  | 19.25h | 959 |
| 76 | 1.1.3.1 | **Capacitación** |  | 0.67d | 2012-04-12 09:00 | 2012-04-12 14:00 | 74 | 0d |  |  | 16h | 788 |
| 77 | 1.1.3.1.1 | Reunión inicial con Capacitadores |  | 4h | 2012-04-12 09:00 | 2012-04-12 14:00 | 74 | 0d |  | Hector Torres; Ignacio Cardenas; Jessica Pupillo; Jorge Pires | 16h | 788 |
| 78 | 1.1.3.2 | **Seguimiento y control de Capacitación** |  | 0.12d | 2012-04-17 14:00 | 2012-04-17 14:45 | 76 | 0d |  |  | 3.25h | 171 |
| 79 | 1.1.3.2.1 | Reunión con equipo de Capacitación Chat en Línea |  | 30min | 2012-04-17 14:00 | 2012-04-17 14:30 | 261 | 0.04d | 0d | Hector Torres; Ignacio Cardenas | 1h | 55.5 |
| 80 | 1.1.3.2.2 | Entrega Manual de Uso a JD Banco Mercantil | milestone | 0d | 2012-04-17 14:30 | 2012-04-17 14:30 | 79 | 0.04d |  |  |  |  |
| 81 | 1.1.3.2.3 | Reunión con equipo de Capacitación Gestión de Citas |  | 45min | 2012-04-17 14:00 | 2012-04-17 14:45 | 271 | 0d |  | Hector Torres; Jessica Pupillo; Jorge Pires | 2.25h | 115.5 |
| 82 | 1.1.3.2.4 | Entrega Manual de Uso a JD Banco Mercantil | milestone | 0d | 2012-04-17 14:45 | 2012-04-17 14:45 | 81 | 0d |  |  |  |  |
| 83 | 1.1.3.3 | Finalización Tercera Etapa | milestone | 0d | 2012-04-17 14:45 | 2012-04-17 14:45 | 82 | 0d |  |  |  |  |
| 84 | 1.1.4 | **Cuarta Etapa** |  | 9.83d | 2012-04-19 14:45 | 2012-05-01 08:45 | 75FS+2.67d | 0d |  |  | 29h | 1,507 |
| 85 | 1.1.4.1 | **Implementación** |  | 0.17d | 2012-04-19 14:45 | 2012-04-19 15:45 | 83 | 0d |  |  | 5h | 235 |
| 86 | 1.1.4.1.1 | Reunión Plan de implementación |  | 1h | 2012-04-19 14:45 | 2012-04-19 15:45 | 83 | 0d |  | Hector Torres; Jessica Pupillo; Ignacio Cardenas; Jorge Pires; Solsire Torres | 5h | 235 |
| 87 | 1.1.4.2 | **Seguimiento y control de implementación** |  | 6.67d | 2012-04-24 08:45 | 2012-05-01 08:45 | 85 | 0d |  |  | 24h | 1,272 |
| 88 | 1.1.4.2.1 | **Reunión con Equipo de Desarrollo** |  | 5.33d | 2012-04-24 08:45 | 2012-04-30 08:45 | 85 | 0d |  |  | 8h | 394 |
| 89 | 1.1.4.2.1.1 | Reunión con equipo de Desarrollo 1 |  | 1h | 2012-04-24 08:45 | 2012-04-24 09:45 | 279 | 0d |  | Hector Torres; Ignacio Cardenas; Jessica Pupillo; Jorge Pires | 4h | 197 |
| 90 | 1.1.4.2.1.2 | Generación de reportes de errores: Chat en Línea | milestone | 0d | 2012-04-24 09:45 | 2012-04-24 09:45 | 89 | 0d |  | Hector Torres |  |  |
| 91 | 1.1.4.2.1.3 | Reunión con equipo de Desarrollo 2 |  | 1h | 2012-04-27 16:45 | 2012-04-30 08:45 | 280 | 0d |  | Hector Torres; Ignacio Cardenas; Jessica Pupillo; Jorge Pires | 4h | 197 |
| 92 | 1.1.4.2.1.4 | Generación de reporte de errores: Gestión de Citas | milestone | 0d | 2012-04-30 08:45 | 2012-04-30 08:45 | 91 | 0d |  | Hector Torres |  |  |

| ID | WBS | Task | Type | Duration | Start | Finish | Predecessors | Total slack | Resources | Work | Cost |
| --- | --- | --- | --- | --- | --- | --- | --- | --- | --- | --- | --- |
| 93 | 1.1.4.2.2 | **Post- Implementación** |  | 1.33d | 2012-04-30 08:45 | 2012-05-01 08:45 | 88 | 0d |  | 16h | 878 |
| 94 | 1.1.4.2.2.1 | Generación de reporte de errores y casos no contemplados |  | 4h | 2012-04-30 08:45 | 2012-04-30 13:45 | 92 | 0d | Hector Torres | 4h | 272 |
| 95 | 1.1.4.2.2.2 | Reunión con Banco Mercantil para priorizar errores |  | 2h | 2012-04-30 13:45 | 2012-04-30 15:45 | 94 | 0d | Hector Torres | 2h | 136 |
| 96 | 1.1.4.2.2.3 | Reunión con el equipo de Trabajo |  | 2h | 2012-04-30 15:45 | 2012-05-01 08:45 | 95 | 0d | Hector Torres; Jessica Pupillo; Ignacio Cardenas; Jorge Pires; Solsire Torres | 10h | 470 |
| 97 | 1.1.4.3 | Finalización de la Cuarta Etapa | milestone | 0d | 2012-05-01 08:45 | 2012-05-01 08:45 | 96 | 8d |  |  |  |
| 98 | 1.1.5 | **Quinta Etapa** |  | 9.92d | 2012-05-09 08:45 | 2012-05-18 13:15 | 84 | 0d |  | 37.5h | 1,739 |
| 99 | 1.1.5.1 | **Evaluación de Productividad** |  | 8.08d | 2012-05-09 08:45 | 2012-05-17 09:15 | 97 | 0d |  | 24.5h | 931 |
| 100 | 1.1.5.1.1 | **Toma de medidas** |  | 0.33d | 2012-05-09 08:45 | 2012-05-09 10:45 | 97 | 0d |  | 14h | 364 |
| 101 | 1.1.5.1.1.1 | Reunión con Estadistas |  | 2h | 2012-05-09 08:45 | 2012-05-09 10:45 | 285 | 0d | Daniel Conde; Francisco Tiapa; Hector Torres; Johan Colina; Luis Alfaro; Luis Laurenco; Jesús Miranda | 14h | 364 |
| 102 | 1.1.5.1.2 | **Seguimiento y control de toma de medidas** |  | 0.42d | 2012-05-16 09:45 | 2012-05-16 13:15 | 100 | 0d |  | 5.5h | 227 |
| 103 | 1.1.5.1.2.1 | Reunión con equipo de Estadistas |  | 30min | 2012-05-16 09:45 | 2012-05-16 10:15 | 299 | 0d | Daniel Conde; Francisco Tiapa; Hector Torres; Johan Colina; Luis Alfaro; Luis Laurenco; Jesús Miranda | 3.5h | 91 |
| 104 | 1.1.5.1.2.2 | Generación de reportes de estadísticas | milestone | 0d | 2012-05-16 10:15 | 2012-05-16 10:15 | 103 | 0d |  |  |  |
| 105 | 1.1.5.1.2.3 | Reunión con JD Banco Mercantil |  | 2h | 2012-05-16 10:15 | 2012-05-16 13:15 | 104 | 0d | Hector Torres | 2h | 136 |
| 106 | 1.1.5.1.2.4 | Entrega Reporte Toma de Medidas | milestone | 0d | 2012-05-16 13:15 | 2012-05-16 13:15 | 105 | 0d |  |  |  |
| 107 | 1.1.5.1.3 | **Análisis datos obtenidos por las encuestas** |  | 0.83d | 2012-05-16 13:15 | 2012-05-17 09:15 | 102 | 0d |  | 5h | 340 |
| 108 | 1.1.5.1.3.1 | Generar informe de resultado de encuestas |  | 3h | 2012-05-16 13:15 | 2012-05-16 16:15 |  | 0d | Hector Torres | 3h | 204 |
| 109 | 1.1.5.1.3.2 | Reunión con JD Banco Mercantil para presentar resultados de encuesta |  | 2h | 2012-05-16 16:15 | 2012-05-17 09:15 | 108 | 0d | Hector Torres | 2h | 136 |
| 110 | 1.1.5.1.4 | Fin de Evaluación de Productividad | milestone | 0d | 2012-05-17 09:15 | 2012-05-17 09:15 | 109 | 0d |  |  |  |
| 111 | 1.1.5.2 | **Cierre del Proyecto** |  | 1.83d | 2012-05-17 09:15 | 2012-05-18 13:15 | 99 | 0d |  | 13h | 808 |
| 112 | 1.1.5.2.1 | Verificación del cumplimiento de los objetivos |  | 2h | 2012-05-17 09:15 | 2012-05-17 11:15 | 110 | 0d | Hector Torres | 2h | 136 |
| 113 | 1.1.5.2.2 | Elaboración de Informe Final del Proyecto |  | 4h | 2012-05-17 11:15 | 2012-05-17 16:15 | 112 | 0d | Hector Torres | 4h | 272 |
| 114 | 1.1.5.2.3 | Reunión final con JD Banco Mercantil |  | 3h | 2012-05-17 16:15 | 2012-05-18 10:15 | 113 | 0d | Hector Torres | 3h | 204 |
| 115 | 1.1.5.2.4 | Cierre Administrativo |  | 2h | 2012-05-18 10:15 | 2012-05-18 13:15 | 114 | 0d | Hector Torres; Joana Pardo | 4h | 196 |
| 116 | 1.1.5.2.5 | Fin Cierre del Proyecto | milestone | 0d | 2012-05-18 13:15 | 2012-05-18 13:15 | 115 | 0d |  |  |  |
| 117 | 1.1.5.3 | Finalización de la Quinta Etapa | milestone | 0d | 2012-05-18 13:15 | 2012-05-18 13:15 | 116 | 0d |  |  |  |
| 118 | 1.1.6 | Fin Gestión de Proyecto | milestone | 0d | 2012-05-18 13:15 | 2012-05-18 13:15 | 117 | 0d |  |  |  |

| ID | WBS | Task | Type | Duration | Start | Finish | Predecessors | Total slack | Free slack | Resources | Work | Cost |
| --- | --- | --- | --- | --- | --- | --- | --- | --- | --- | --- | --- | --- |
| 119 | 1.2 | **Mecanismo en Línea Banco Mercantil** |  | 122.04d | 2012-01-09 17:00 | 2012-05-16 13:15 | 3 | 2d |  |  | 2027h | 105,450 |
| 120 | 1.2.1 | **Primera Etapa** |  | 0.67d | 2012-01-10 08:00 | 2012-01-10 12:00 | 3 | 2d |  |  | 7h | 39,198 |
| 121 | 1.2.1.1 | **Material de Oficina** |  | 0.67d | 2012-01-10 08:00 | 2012-01-10 12:00 | 3 | 2d | 0d |  | 4h | 39,120 |
| 122 | 1.2.1.1.1 | Compra Material de Oficina |  | 4h | 2012-01-10 08:00 | 2012-01-10 12:00 | 25 | 2d |  | Joana Pardo; Material de Oficina [500%] | 4h | 39,120 |
| 123 | 1.2.1.2 | **Contrato** |  | 0.33d | 2012-01-10 08:00 | 2012-01-10 10:00 | 3 | 2.33d | 0.33d |  | 3h | 78 |
| 124 | 1.2.1.2.1 | Elaboración Contrato |  | 1h | 2012-01-10 08:00 | 2012-01-10 09:00 | 25 | 2.33d | 0d | Patricia Figueira | 1h | 5 |
| 125 | 1.2.1.2.2 | Firma Contrato |  | 1h | 2012-01-10 09:00 | 2012-01-10 10:00 | 124 | 2.33d |  | Hector Torres; Patricia Figueira | 2h | 73 |
| 126 | 1.2.1.3 | Fin Primera Etapa | milestone | 0d | 2012-01-10 12:00 | 2012-01-10 12:00 | 121, 123 | 2d |  |  |  |  |
| 127 | 1.2.2 | **Segunda Etapa** |  | 85.33d | 2012-01-12 14:00 | 2012-04-11 14:00 | 120 | 0.33d |  |  | 1433h | 46,027 |
| 128 | 1.2.2.1 | **Toma de Medidas** |  | 15.5d | 2012-01-12 14:00 | 2012-01-30 10:00 | 27 | 70.17d |  |  | 543h | 10,317 |
| 129 | 1.2.2.1.1 | **Medición tiempo espera Operaciones de Atención al cliente** |  | 15.17d | 2012-01-12 14:00 | 2012-01-27 17:00 | 28 | 70.17d |  |  | 540h | 10,260 |
| 130 | 1.2.2.1.1.1 | **Primera Semana** |  | 5d | 2012-01-12 14:00 | 2012-01-18 11:00 | 28 | 70.17d | 0d |  | 180h | 3,420 |
| 131 | 1.2.2.1.1.1.1 | Agencia el Rosal |  | 30h | 2012-01-12 14:00 | 2012-01-18 11:00 | 28 | 70.17d |  | Daniel Conde | 30h | 570 |
| 132 | 1.2.2.1.1.1.2 | Agencia Altamira |  | 30h | 2012-01-12 14:00 | 2012-01-18 11:00 | 28 | 70.17d |  | Francisco Tiapa | 30h | 570 |
| 133 | 1.2.2.1.1.1.3 | Agencia Cumbres de Curumo |  | 30h | 2012-01-12 14:00 | 2012-01-18 11:00 | 28 | 70.17d |  | Jesús Miranda | 30h | 570 |
| 134 | 1.2.2.1.1.1.4 | Agencia Santa Fe |  | 30h | 2012-01-12 14:00 | 2012-01-18 11:00 | 28 | 70.17d |  | Johan Colina | 30h | 570 |
| 135 | 1.2.2.1.1.1.5 | Agencia Boleita |  | 30h | 2012-01-12 14:00 | 2012-01-18 11:00 | 28 | 70.17d |  | Luis Alfaro | 30h | 570 |
| 136 | 1.2.2.1.1.1.6 | Agencia Oficina Principal |  | 30h | 2012-01-12 14:00 | 2012-01-18 11:00 | 28 | 70.17d |  | Luis Laurenco | 30h | 570 |
| 137 | 1.2.2.1.1.2 | Fin Primera Semana | milestone | 0d | 2012-01-18 11:00 | 2012-01-18 11:00 | 130 | 70.17d | 0d |  |  |  |
| 138 | 1.2.2.1.1.3 | **Segunda Semana** |  | 5d | 2012-01-18 11:30 | 2012-01-24 09:30 | 32 | 70.17d | 0d |  | 180h | 3,420 |
| 139 | 1.2.2.1.1.3.1 | Agencia el Rosal |  | 30h | 2012-01-18 11:30 | 2012-01-24 09:30 | 32 | 70.17d |  | Daniel Conde | 30h | 570 |
| 140 | 1.2.2.1.1.3.2 | Agencia Altamira |  | 30h | 2012-01-18 11:30 | 2012-01-24 09:30 | 32 | 70.17d |  | Francisco Tiapa | 30h | 570 |
| 141 | 1.2.2.1.1.3.3 | Agencia Cumbres de Curumo |  | 30h | 2012-01-18 11:30 | 2012-01-24 09:30 | 32 | 70.17d |  | Jesús Miranda | 30h | 570 |
| 142 | 1.2.2.1.1.3.4 | Agencia Santa Fe |  | 30h | 2012-01-18 11:30 | 2012-01-24 09:30 | 32 | 70.17d |  | Johan Colina | 30h | 570 |
| 143 | 1.2.2.1.1.3.5 | Agencia Boleita |  | 30h | 2012-01-18 11:30 | 2012-01-24 09:30 | 32 | 70.17d |  | Luis Alfaro | 30h | 570 |
| 144 | 1.2.2.1.1.3.6 | Agencia Oficina Principal |  | 30h | 2012-01-18 11:30 | 2012-01-24 09:30 | 32 | 70.17d |  | Luis Laurenco | 30h | 570 |
| 145 | 1.2.2.1.1.4 | Fin Segunda Semana | milestone | 0d | 2012-01-24 09:30 | 2012-01-24 09:30 | 138 | 70.17d | 0d |  |  |  |

Notes:
- 122: El costo unitario del Material de Oficina es el total mensual. Se compran 5 unidades representando los 5 meses aproximados de duracion del proyecto

| ID | WBS | Task | Type | Duration | Start | Finish | Predecessors | Total slack | Free slack | Resources | Work | Cost |
| --- | --- | --- | --- | --- | --- | --- | --- | --- | --- | --- | --- | --- |
| 146 | 1.2.2.1.1.5 | **Tercera Semana** |  | 5d | 2012-01-24 10:00 | 2012-01-27 17:00 | 34 | 70.17d | 0d |  | 180h | 3,420 |
| 147 | 1.2.2.1.1.5.1 | Agencia el Rosal |  | 30h | 2012-01-24 10:00 | 2012-01-27 17:00 | 34 | 70.17d |  | Daniel Conde | 30h | 570 |
| 148 | 1.2.2.1.1.5.2 | Agencia Altamira |  | 30h | 2012-01-24 10:00 | 2012-01-27 17:00 | 34 | 70.17d |  | Francisco Tiapa | 30h | 570 |
| 149 | 1.2.2.1.1.5.3 | Agencia Cumbres de Curumo |  | 30h | 2012-01-24 10:00 | 2012-01-27 17:00 | 34 | 70.17d |  | Jesús Miranda | 30h | 570 |
| 150 | 1.2.2.1.1.5.4 | Agencia Santa Fe |  | 30h | 2012-01-24 10:00 | 2012-01-27 17:00 | 34 | 70.17d |  | Johan Colina | 30h | 570 |
| 151 | 1.2.2.1.1.5.5 | Agencia Boleita |  | 30h | 2012-01-24 10:00 | 2012-01-27 17:00 | 34 | 70.17d |  | Luis Alfaro | 30h | 570 |
| 152 | 1.2.2.1.1.5.6 | Agencia Oficina Principal |  | 30h | 2012-01-24 10:00 | 2012-01-27 17:00 | 34 | 70.17d |  | Luis Laurenco | 30h | 570 |
| 153 | 1.2.2.1.1.6 | Fin Tercera Semana | milestone | 0d | 2012-01-27 17:00 | 2012-01-27 17:00 | 146 | 70.17d | 0d |  |  |  |
| 154 | 1.2.2.1.2 | Totalización Llamadas atendidas en call center |  | 1h | 2012-01-30 08:00 | 2012-01-30 09:00 | 153 | 70.17d | 0d | Daniel Conde | 1h | 19 |
| 155 | 1.2.2.1.3 | Totalización mediciones tiempo espera Operaciones de Atención al cliente |  | 1h | 2012-01-30 09:00 | 2012-01-30 10:00 | 154 | 70.17d | 0d | Francisco Tiapa; Jesús Miranda | 2h | 38 |
| 156 | 1.2.2.1.4 | Fin Toma de Medidas | milestone | 0d | 2012-01-30 10:00 | 2012-01-30 10:00 | 155 | 70.17d | 0d |  |  |  |
| 157 | 1.2.2.2 | **Desarollo del Mecanismo** |  | 84.33d | 2012-01-13 11:00 | 2012-04-11 14:00 | 39 | 0d |  |  | 890h | 35,710 |
| 158 | 1.2.2.2.1 | **Chat en Línea** |  | 16.17d | 2012-01-13 11:00 | 2012-01-31 12:00 | 40 | 0d |  |  | 149h | 5,953 |
| 159 | 1.2.2.2.1.1 | **Diseño** |  | 6d | 2012-01-13 11:00 | 2012-01-19 16:00 | 40 | 0d |  |  | 36h | 1,368 |
| 160 | 1.2.2.2.1.1.1 | Modularización |  | 12h | 2012-01-13 11:00 | 2012-01-16 16:00 | 40 | 0d |  | Solsire Torres | 12h | 456 |
| 161 | 1.2.2.2.1.1.2 | Diseño Entidad - Relación |  | 6h | 2012-01-16 16:00 | 2012-01-17 14:00 | 160 | 0d |  | Solsire Torres | 6h | 228 |
| 162 | 1.2.2.2.1.1.3 | Diseño del Sistema |  | 18h | 2012-01-17 14:00 | 2012-01-19 16:00 | 161 | 0d |  | Solsire Torres | 18h | 684 |
| 163 | 1.2.2.2.1.1.4 | Fin de Diseño | milestone | 0d | 2012-01-19 16:00 | 2012-01-19 16:00 | 162 | 0d |  |  |  |  |
| 164 | 1.2.2.2.1.2 | **Módulo Envío de Mensajes** |  | 7d | 2012-01-20 09:00 | 2012-01-27 11:00 | 159 | 0d |  |  | 90h | 3,672 |
| 165 | 1.2.2.2.1.2.1 | Interfaz Usuario |  | 12h | 2012-01-20 09:00 | 2012-01-23 14:00 | 44 | 0d |  | Ignacio Cardenas; Jessica Pupillo; Jorge Pires | 36h | 1,548 |
| 166 | 1.2.2.2.1.2.2 | Interfazo Operador |  | 6h | 2012-01-23 14:00 | 2012-01-24 11:00 | 165 | 0d |  | Ignacio Cardenas; Jessica Pupillo; Jorge Pires | 18h | 774 |
| 167 | 1.2.2.2.1.2.3 | Conexión/ Desconexión |  | 6h | 2012-01-24 11:00 | 2012-01-25 09:00 | 166 | 0d |  | Ignacio Cardenas; Jessica Pupillo; Jorge Pires | 18h | 774 |
| 168 | 1.2.2.2.1.2.4 | **Pruebas** |  | 3d | 2012-01-25 09:00 | 2012-01-27 11:00 | 167 | 0d |  |  | 18h | 576 |
| 169 | 1.2.2.2.1.2.4.1 | Pruebas Unitarias |  | 6h | 2012-01-25 09:00 | 2012-01-25 16:00 | 167 | 0d |  | Wilmer Soto | 6h | 192 |
| 170 | 1.2.2.2.1.2.4.2 | Pruebas Funcionales |  | 6h | 2012-01-25 16:00 | 2012-01-26 14:00 | 169 | 0d |  | Wilmer Soto | 6h | 192 |
| 171 | 1.2.2.2.1.2.4.3 | Pruebas de rendimiento |  | 6h | 2012-01-26 14:00 | 2012-01-27 11:00 | 170 | 0d |  | Wilmer Soto | 6h | 192 |
| 172 | 1.2.2.2.1.2.5 | Fin de Módulo Envío de Mensajes | milestone | 0d | 2012-01-27 11:00 | 2012-01-27 11:00 | 171 | 0d |  |  |  |  |

| ID | WBS | Task | Type | Duration | Start | Finish | Predecessors | Total slack | Resources | Work | Cost |
| --- | --- | --- | --- | --- | --- | --- | --- | --- | --- | --- | --- |
| 173 | 1.2.2.2.1.3 | **Módulo Historial Chat** |  | 1d | 2012-01-27 14:00 | 2012-01-30 11:00 | 164 | 0d |  | 12h | 483 |
| 174 | 1.2.2.2.1.3.1 | Correo electrónico con historial de chat |  | 3h | 2012-01-27 14:00 | 2012-01-27 17:00 | 46 | 0d | Ignacio Cardenas; Jessica Pupillo; Jorge Pires | 9h | 387 |
| 175 | 1.2.2.2.1.3.2 | **Pruebas** |  | 0.5d | 2012-01-30 08:00 | 2012-01-30 11:00 | 174 | 0d |  | 3h | 96 |
| 176 | 1.2.2.2.1.3.2.1 | Pruebas Unitarias |  | 1h | 2012-01-30 08:00 | 2012-01-30 09:00 | 174 | 0d | Wilmer Soto | 1h | 32 |
| 177 | 1.2.2.2.1.3.2.2 | Pruebas Funcionales |  | 1h | 2012-01-30 09:00 | 2012-01-30 10:00 | 176 | 0d | Wilmer Soto | 1h | 32 |
| 178 | 1.2.2.2.1.3.2.3 | Pruebas de rendimiento |  | 1h | 2012-01-30 10:00 | 2012-01-30 11:00 | 177 | 0d | Wilmer Soto | 1h | 32 |
| 179 | 1.2.2.2.1.3.3 | Fin de Módulo Historial Chat | milestone | 0d | 2012-01-30 11:00 | 2012-01-30 11:00 | 178 | 0d |  |  |  |
| 180 | 1.2.2.2.1.4 | **Módulo Encuesta** |  | 1.17d | 2012-01-30 14:00 | 2012-01-31 12:00 | 173 | 0d |  | 11h | 430 |
| 181 | 1.2.2.2.1.4.1 | Diseño Encuesta |  | 2h | 2012-01-30 14:00 | 2012-01-30 16:00 | 48 | 0d | Solsire Torres | 2h | 76 |
| 182 | 1.2.2.2.1.4.2 | Envío de correo electrónico con encuesta |  | 2h | 2012-01-30 16:00 | 2012-01-31 09:00 | 181 | 0d | Ignacio Cardenas; Jessica Pupillo; Jorge Pires | 6h | 258 |
| 183 | 1.2.2.2.1.4.3 | **Pruebas** |  | 0.5d | 2012-01-31 09:00 | 2012-01-31 12:00 | 182 | 0d |  | 3h | 96 |
| 184 | 1.2.2.2.1.4.3.1 | Pruebas Unitarias |  | 1h | 2012-01-31 09:00 | 2012-01-31 10:00 | 182 | 0d | Wilmer Soto | 1h | 32 |
| 185 | 1.2.2.2.1.4.3.2 | Pruebas Funcionales |  | 1h | 2012-01-31 10:00 | 2012-01-31 11:00 | 184 | 0d | Wilmer Soto | 1h | 32 |
| 186 | 1.2.2.2.1.4.3.3 | Pruebas de rendimiento |  | 1h | 2012-01-31 11:00 | 2012-01-31 12:00 | 185 | 0d | Wilmer Soto | 1h | 32 |
| 187 | 1.2.2.2.1.4.4 | Fin de Módulo Encuesta | milestone | 0d | 2012-01-31 12:00 | 2012-01-31 12:00 | 186 | 0d |  |  |  |
| 188 | 1.2.2.2.1.5 | Fin Chat en Línea | milestone | 0d | 2012-01-31 12:00 | 2012-01-31 12:00 | 187 | 0d |  |  |  |
| 189 | 1.2.2.2.2 | **Gestión de citas** |  | 67.83d | 2012-01-31 15:00 | 2012-04-11 14:00 | 158 | 0d |  | 741h | 29,757 |
| 190 | 1.2.2.2.2.1 | **Diseño** |  | 9d | 2012-01-31 15:00 | 2012-02-09 12:00 | 158 | 0d |  | 54h | 2,052 |
| 191 | 1.2.2.2.2.1.1 | Modularización |  | 18h | 2012-01-31 15:00 | 2012-02-02 17:00 | 50 | 0d | Solsire Torres | 18h | 684 |
| 192 | 1.2.2.2.2.1.2 | Diseño Entidad - Relación |  | 12h | 2012-02-03 08:00 | 2012-02-06 12:00 | 191 | 0d | Solsire Torres | 12h | 456 |
| 193 | 1.2.2.2.2.1.3 | Diseño del sistema |  | 24h | 2012-02-06 13:00 | 2012-02-09 12:00 | 192 | 0d | Solsire Torres | 24h | 912 |
| 194 | 1.2.2.2.2.1.4 | Fin de Diseño | milestone | 0d | 2012-02-09 12:00 | 2012-02-09 12:00 | 193 | 0d |  |  |  |
| 195 | 1.2.2.2.2.2 | **Módulo Especificación Cita** |  | 8.83d | 2012-02-09 15:00 | 2012-02-20 11:00 | 190 | 0d |  | 99h | 3,927 |
| 196 | 1.2.2.2.2.2.1 | Funcionalidad: Búsqueda de Agencia |  | 4h | 2012-02-09 15:00 | 2012-02-10 10:00 | 52 | 0d | Ignacio Cardenas; Jessica Pupillo; Jorge Pires | 12h | 516 |
| 197 | 1.2.2.2.2.2.2 | Funcionalidad: Selección de Operaciones a Realizar |  | 3h | 2012-02-10 10:00 | 2012-02-10 14:00 | 196 | 0d | Ignacio Cardenas; Jessica Pupillo; Jorge Pires | 9h | 387 |
| 198 | 1.2.2.2.2.2.3 | Funcionalidad: Selección Fecha y Hora de cita |  | 12h | 2012-02-10 14:00 | 2012-02-14 09:00 | 197 | 0d | Ignacio Cardenas; Jessica Pupillo; Jorge Pires | 36h | 1,548 |
| 199 | 1.2.2.2.2.2.4 | Funcionalidad: Verificación datos del cliente |  | 4h | 2012-02-14 09:00 | 2012-02-14 14:00 | 198 | 0d | Ignacio Cardenas; Jessica Pupillo; Jorge Pires | 12h | 516 |

| ID | WBS | Task | Type | Duration | Start | Finish | Predecessors | Total slack | Resources | Work | Cost |
| --- | --- | --- | --- | --- | --- | --- | --- | --- | --- | --- | --- |
| 200 | 1.2.2.2.2.2.5 | **Pruebas** |  | 5d | 2012-02-14 14:00 | 2012-02-20 11:00 | 199 | 0d |  | 30h | 960 |
| 201 | 1.2.2.2.2.2.5.1 | Pruebas Unitarias |  | 12h | 2012-02-14 14:00 | 2012-02-16 09:00 | 199 | 0d | Wilmer Soto | 12h | 384 |
| 202 | 1.2.2.2.2.2.5.2 | Pruebas Funcionales |  | 12h | 2012-02-16 09:00 | 2012-02-17 14:00 | 201 | 0d | Wilmer Soto | 12h | 384 |
| 203 | 1.2.2.2.2.2.5.3 | Pruebas de rendimiento |  | 6h | 2012-02-17 14:00 | 2012-02-20 11:00 | 202 | 0d | Wilmer Soto | 6h | 192 |
| 204 | 1.2.2.2.2.2.6 | Fin de Especificación Cita | milestone | 0d | 2012-02-20 11:00 | 2012-02-20 11:00 | 203 | 0d |  |  |  |
| 205 | 1.2.2.2.2.3 | **Módulo Operaciones de Cita** |  | 15d | 2012-02-20 14:00 | 2012-03-06 16:00 | 195 | 0d |  | 186h | 7,536 |
| 206 | 1.2.2.2.2.3.1 | Crear Cita |  | 24h | 2012-02-20 14:00 | 2012-02-23 14:00 | 54 | 0d | Ignacio Cardenas; Jessica Pupillo; Jorge Pires | 72h | 3,096 |
| 207 | 1.2.2.2.2.3.2 | Cancelar Cita |  | 6h | 2012-02-23 14:00 | 2012-02-24 11:00 | 206 | 0d | Ignacio Cardenas; Jessica Pupillo; Jorge Pires | 18h | 774 |
| 208 | 1.2.2.2.2.3.3 | Modificar Cita |  | 12h | 2012-02-24 11:00 | 2012-02-27 16:00 | 207 | 0d | Ignacio Cardenas; Jessica Pupillo; Jorge Pires | 36h | 1,548 |
| 209 | 1.2.2.2.2.3.4 | Consultar Cita |  | 6h | 2012-02-27 16:00 | 2012-02-28 14:00 | 208 | 0d | Ignacio Cardenas; Jessica Pupillo; Jorge Pires | 18h | 774 |
| 210 | 1.2.2.2.2.3.5 | **Pruebas** |  | 7d | 2012-02-28 14:00 | 2012-03-06 16:00 | 209 | 0d |  | 42h | 1,344 |
| 211 | 1.2.2.2.2.3.5.1 | Pruebas Unitarias |  | 18h | 2012-02-28 14:00 | 2012-03-01 16:00 | 209 | 0d | Wilmer Soto | 18h | 576 |
| 212 | 1.2.2.2.2.3.5.2 | Pruebas Funcionales |  | 18h | 2012-03-01 16:00 | 2012-03-06 09:00 | 211 | 0d | Wilmer Soto | 18h | 576 |
| 213 | 1.2.2.2.2.3.5.3 | Pruebas de rendimiento |  | 6h | 2012-03-06 09:00 | 2012-03-06 16:00 | 212 | 0d | Wilmer Soto | 6h | 192 |
| 214 | 1.2.2.2.2.3.6 | Fin de Operaciones de Cita | milestone | 0d | 2012-03-06 16:00 | 2012-03-06 16:00 | 213 | 0d |  |  |  |
| 215 | 1.2.2.2.2.4 | **Módulo Back-end** |  | 14d | 2012-03-07 09:00 | 2012-03-21 14:00 | 205 | 0d |  | 168h | 6,762 |
| 216 | 1.2.2.2.2.4.1 | Desarrollo Módulo |  | 42h | 2012-03-07 09:00 | 2012-03-14 11:00 | 56 | 0d | Ignacio Cardenas; Jessica Pupillo; Jorge Pires | 126h | 5,418 |
| 217 | 1.2.2.2.2.4.2 | **Pruebas** |  | 7d | 2012-03-14 11:00 | 2012-03-21 14:00 | 216 | 0d |  | 42h | 1,344 |
| 218 | 1.2.2.2.2.4.2.1 | Pruebas Unitarias |  | 18h | 2012-03-14 11:00 | 2012-03-16 14:00 | 216 | 0d | Wilmer Soto | 18h | 576 |
| 219 | 1.2.2.2.2.4.2.2 | Pruebas Funcionales |  | 18h | 2012-03-16 14:00 | 2012-03-20 16:00 | 218 | 0d | Wilmer Soto | 18h | 576 |
| 220 | 1.2.2.2.2.4.2.3 | Pruebas de rendimiento |  | 6h | 2012-03-20 16:00 | 2012-03-21 14:00 | 219 | 0d | Wilmer Soto | 6h | 192 |
| 221 | 1.2.2.2.2.4.3 | Fin Back-end | milestone | 0d | 2012-03-21 14:00 | 2012-03-21 14:00 | 220 | 0d |  |  |  |
| 222 | 1.2.2.2.2.5 | **Módulo de Notificaciones** |  | 2.83d | 2012-03-21 16:00 | 2012-03-23 17:00 | 215 | 0d |  | 37h | 1,514 |
| 223 | 1.2.2.2.2.5.1 | **Notificación Cliente** |  | 1d | 2012-03-21 16:00 | 2012-03-22 14:00 | 58 | 0d |  | 18h | 774 |
| 224 | 1.2.2.2.2.5.1.1 | Correo electrónico al momento de crear Cita |  | 2h | 2012-03-21 16:00 | 2012-03-22 09:00 | 58 | 0d | Ignacio Cardenas; Jessica Pupillo; Jorge Pires | 6h | 258 |
| 225 | 1.2.2.2.2.5.1.2 | Correo electrónico 1 día antes de Cita |  | 2h | 2012-03-22 09:00 | 2012-03-22 11:00 | 224 | 0d | Ignacio Cardenas; Jessica Pupillo; Jorge Pires | 6h | 258 |
| 226 | 1.2.2.2.2.5.1.3 | SMS 1 día antes de Cita |  | 2h | 2012-03-22 11:00 | 2012-03-22 14:00 | 225 | 0d | Ignacio Cardenas; Jessica Pupillo; Jorge Pires | 6h | 258 |

| ID | WBS | Task | Type | Duration | Start | Finish | Predecessors | Total slack | Resources | Work | Cost |
| --- | --- | --- | --- | --- | --- | --- | --- | --- | --- | --- | --- |
| 227 | 1.2.2.2.2.5.2 | **Notificación Agente Bancario** |  | 0.67d | 2012-03-22 14:00 | 2012-03-23 09:00 | 223 | 0d |  | 12h | 516 |
| 228 | 1.2.2.2.2.5.2.1 | Mensaje Interno |  | 2h | 2012-03-22 14:00 | 2012-03-22 16:00 | 226 | 0d | Ignacio Cardenas; Jessica Pupillo; Jorge Pires | 6h | 258 |
| 229 | 1.2.2.2.2.5.2.2 | Correo electrónico |  | 2h | 2012-03-22 16:00 | 2012-03-23 09:00 | 228 | 0d | Ignacio Cardenas; Jessica Pupillo; Jorge Pires | 6h | 258 |
| 230 | 1.2.2.2.2.5.3 | **Pruebas** |  | 1.17d | 2012-03-23 09:00 | 2012-03-23 17:00 | 227 | 0d |  | 7h | 224 |
| 231 | 1.2.2.2.2.5.3.1 | Pruebas Unitarias |  | 3h | 2012-03-23 09:00 | 2012-03-23 12:00 | 229 | 0d | Wilmer Soto | 3h | 96 |
| 232 | 1.2.2.2.2.5.3.2 | Pruebas Funcionales |  | 3h | 2012-03-23 13:00 | 2012-03-23 16:00 | 231 | 0d | Wilmer Soto | 3h | 96 |
| 233 | 1.2.2.2.2.5.3.3 | Pruebas de rendimiento |  | 1h | 2012-03-23 16:00 | 2012-03-23 17:00 | 232 | 0d | Wilmer Soto | 1h | 32 |
| 234 | 1.2.2.2.2.5.4 | Fin de Notificaciones | milestone | 0d | 2012-03-23 17:00 | 2012-03-23 17:00 | 233 | 0d |  |  |  |
| 235 | 1.2.2.2.2.6 | **Módulo Documentos** |  | 15d | 2012-03-26 10:00 | 2012-04-10 12:00 | 222 | 0d |  | 186h | 7,536 |
| 236 | 1.2.2.2.2.6.1 | **Adjunto Documentos** |  | 3d | 2012-03-26 10:00 | 2012-03-28 12:00 | 60 | 0d |  | 54h | 2,322 |
| 237 | 1.2.2.2.2.6.1.1 | Desarrollo de Adjunto de Documentos |  | 18h | 2012-03-26 10:00 | 2012-03-28 12:00 | 60 | 0d | Ignacio Cardenas; Jessica Pupillo; Jorge Pires | 54h | 2,322 |
| 238 | 1.2.2.2.2.6.2 | **Llenado de Formularios** |  | 5d | 2012-03-28 13:00 | 2012-04-03 10:00 | 236 | 0d |  | 90h | 3,870 |
| 239 | 1.2.2.2.2.6.2.1 | Diseño y desarrollo de Formularios |  | 30h | 2012-03-28 13:00 | 2012-04-03 10:00 | 237 | 0d | Ignacio Cardenas; Jessica Pupillo; Jorge Pires | 90h | 3,870 |
| 240 | 1.2.2.2.2.6.3 | **Pruebas** |  | 7d | 2012-04-03 10:00 | 2012-04-10 12:00 | 238 | 0d |  | 42h | 1,344 |
| 241 | 1.2.2.2.2.6.3.1 | Pruebas Unitarias |  | 18h | 2012-04-03 10:00 | 2012-04-05 12:00 | 239 | 0d | Wilmer Soto | 18h | 576 |
| 242 | 1.2.2.2.2.6.3.2 | Pruebas Funcionales |  | 18h | 2012-04-05 13:00 | 2012-04-09 15:00 | 241 | 0d | Wilmer Soto | 18h | 576 |
| 243 | 1.2.2.2.2.6.3.3 | Pruebas de rendimiento |  | 6h | 2012-04-09 15:00 | 2012-04-10 12:00 | 242 | 0d | Wilmer Soto | 6h | 192 |
| 244 | 1.2.2.2.2.6.4 | Fin Documentos | milestone | 0d | 2012-04-10 12:00 | 2012-04-10 12:00 | 243 | 0d |  |  |  |
| 245 | 1.2.2.2.2.7 | **Módulo Encuesta** |  | 1.17d | 2012-04-10 15:00 | 2012-04-11 14:00 | 235 | 0d |  | 11h | 430 |
| 246 | 1.2.2.2.2.7.1 | Diseño Encuesta |  | 2h | 2012-04-10 15:00 | 2012-04-10 17:00 | 62 | 0d | Solsire Torres | 2h | 76 |
| 247 | 1.2.2.2.2.7.2 | Envío de correo electrónico con encuesta |  | 2h | 2012-04-11 08:00 | 2012-04-11 10:00 | 246 | 0d | Ignacio Cardenas; Jessica Pupillo; Jorge Pires | 6h | 258 |
| 248 | 1.2.2.2.2.7.3 | **Pruebas** |  | 0.5d | 2012-04-11 10:00 | 2012-04-11 14:00 | 247 | 0d |  | 3h | 96 |
| 249 | 1.2.2.2.2.7.3.1 | Pruebas Unitarias |  | 1h | 2012-04-11 10:00 | 2012-04-11 11:00 | 247 | 0d | Wilmer Soto | 1h | 32 |
| 250 | 1.2.2.2.2.7.3.2 | Pruebas Funcionales |  | 1h | 2012-04-11 11:00 | 2012-04-11 12:00 | 249 | 0d | Wilmer Soto | 1h | 32 |
| 251 | 1.2.2.2.2.7.3.3 | Pruebas de rendimiento |  | 1h | 2012-04-11 13:00 | 2012-04-11 14:00 | 250 | 0d | Wilmer Soto | 1h | 32 |
| 252 | 1.2.2.2.2.7.4 | Fin Encuestas | milestone | 0d | 2012-04-11 14:00 | 2012-04-11 14:00 | 251 | 0d |  |  |  |
| 253 | 1.2.2.2.2.8 | Fin Gestión de Citas | milestone | 0d | 2012-04-11 14:00 | 2012-04-11 14:00 | 252 | 0d |  |  |  |
| 254 | 1.2.2.2.3 | Fin Desarollo del Mecanismo | milestone | 0d | 2012-04-11 14:00 | 2012-04-11 14:00 | 253 | 0d |  |  |  |
| 255 | 1.2.2.3 | Fin Segunda Etapa | milestone | 0d | 2012-04-11 14:00 | 2012-04-11 14:00 | 254 | 0d |  |  |  |

| ID | WBS | Task | Type | Duration | Start | Finish | Predecessors | Total slack | Free slack | Resources | Work | Cost |
| --- | --- | --- | --- | --- | --- | --- | --- | --- | --- | --- | --- | --- |
| 256 | 1.2.3 | **Tercera Etapa** |  | 4d | 2012-04-12 14:00 | 2012-04-17 14:00 | 127 | 0d |  |  | 90h | 3,870 |
| 257 | 1.2.3.1 | **Capacitación** |  | 4d | 2012-04-12 14:00 | 2012-04-17 14:00 | 255 | 0d |  |  | 90h | 3,870 |
| 258 | 1.2.3.1.1 | **Capacitación Chat en Línea** |  | 4d | 2012-04-12 14:00 | 2012-04-17 14:00 | 77 | 0.04d |  |  | 36h | 1,548 |
| 259 | 1.2.3.1.1.1 | Elaboración de Manual de Uso |  | 6h | 2012-04-12 14:00 | 2012-04-13 11:00 | 77 | 0.04d | 0d | Ignacio Cardenas; Jessica Pupillo; Jorge Pires | 18h | 774 |
| 260 | 1.2.3.1.1.2 | Capacitación Operadores Call Center |  | 18h | 2012-04-13 11:00 | 2012-04-17 14:00 | 259 | 0.04d | 0d | Ignacio Cardenas | 18h | 774 |
| 261 | 1.2.3.1.2 | Fin de Capacitación Chat en Línea | milestone | 0d | 2012-04-17 14:00 | 2012-04-17 14:00 | 260 | 0.04d | 0d |  |  |  |
| 262 | 1.2.3.1.3 | **Capacitación Gestión de Citas** |  | 4d | 2012-04-12 14:00 | 2012-04-17 14:00 | 77 | 0d |  |  | 54h | 2,322 |
| 263 | 1.2.3.1.3.1 | Elaboración de Manual de uso |  | 12h | 2012-04-12 14:00 | 2012-04-16 09:00 | 77 | 0d |  | Ignacio Cardenas; Jessica Pupillo; Jorge Pires | 36h | 1,548 |
| 264 | 1.2.3.1.3.2 | **Capacitación Agentes Bancarios** |  | 2d | 2012-04-16 09:00 | 2012-04-17 14:00 | 263 | 0d |  |  | 18h | 774 |
| 265 | 1.2.3.1.3.2.1 | Agencia El Rosal |  | 3h | 2012-04-16 09:00 | 2012-04-16 12:00 | 263 | 0d |  | Jorge Pires | 3h | 129 |
| 266 | 1.2.3.1.3.2.2 | Agencia Altamira |  | 3h | 2012-04-16 13:00 | 2012-04-16 16:00 | 265 | 0d |  | Jorge Pires | 3h | 129 |
| 267 | 1.2.3.1.3.2.3 | Agencia Cumbres de Curumo |  | 3h | 2012-04-16 16:00 | 2012-04-17 10:00 | 266 | 0d |  | Jorge Pires | 3h | 129 |
| 268 | 1.2.3.1.3.2.4 | Agencia Santa Fe |  | 3h | 2012-04-16 09:00 | 2012-04-16 12:00 | 263 | 1d | 0d | Jessica Pupillo | 3h | 129 |
| 269 | 1.2.3.1.3.2.5 | Agencia Boleita |  | 3h | 2012-04-16 13:00 | 2012-04-16 16:00 | 268 | 1d |  | Jessica Pupillo | 3h | 129 |
| 270 | 1.2.3.1.3.2.6 | Agencia Oficina Principal |  | 3h | 2012-04-17 10:00 | 2012-04-17 14:00 | 267 | 0d |  | Jessica Pupillo | 3h | 129 |
| 271 | 1.2.3.1.3.3 | Fin de Capacitación Gestión de Citas | milestone | 0d | 2012-04-17 14:00 | 2012-04-17 14:00 | 264 | 0d |  |  |  |  |
| 272 | 1.2.3.1.4 | Fin Capacitación | milestone | 0d | 2012-04-17 14:00 | 2012-04-17 14:00 | 271 | 2.96d | 0d |  |  |  |
| 273 | 1.2.3.2 | Fin Tercera Etapa | milestone | 0d | 2012-04-17 14:00 | 2012-04-17 14:00 | 272 | 2.96d |  |  |  |  |
| 274 | 1.2.4 | **Cuarta Etapa** |  | 17.67d | 2012-04-19 15:45 | 2012-05-09 08:45 | 256 | 0d |  |  | 288h | 12,384 |
| 275 | 1.2.4.1 | **Implementación** |  | 0d | 2012-04-19 15:45 | 2012-04-19 15:45 | 273 | 0d |  |  |  |  |
| 276 | 1.2.4.1.1 | Puesta en Producción Chat en Línea | milestone | 0d | 2012-04-19 15:45 | 2012-04-19 15:45 | 86 | 0d |  | Jorge Pires; Jessica Pupillo; Ignacio Cardenas |  |  |
| 277 | 1.2.4.1.2 | Puesta en Producción Gestión de Citas | milestone | 0d | 2012-04-19 15:45 | 2012-04-19 15:45 | 86 | 0d |  | Jorge Pires; Jessica Pupillo; Ignacio Cardenas |  |  |
| 278 | 1.2.4.2 | **Post - Implementación** |  | 17.67d | 2012-04-19 15:45 | 2012-05-09 08:45 | 275 | 0d |  |  | 288h | 12,384 |
| 279 | 1.2.4.2.1 | Captación de errores y casos no contemplados Chat en Línea |  | 18h | 2012-04-19 15:45 | 2012-04-24 08:45 | 275 | 0d |  | Jorge Pires; Jessica Pupillo; Ignacio Cardenas | 54h | 2,322 |
| 280 | 1.2.4.2.2 | Captación de errores y casos no contemplados Gestion de Citas |  | 30h | 2012-04-24 09:45 | 2012-04-27 16:45 | 90 | 0d |  | Jorge Pires; Jessica Pupillo; Ignacio Cardenas | 90h | 3,870 |
| 281 | 1.2.4.2.3 | Corección de errores y casos no contemplados Chat en Línea |  | 18h | 2012-05-01 08:45 | 2012-05-03 10:45 | 96 | 0d |  | Jorge Pires; Jessica Pupillo; Ignacio Cardenas | 54h | 2,322 |
| 282 | 1.2.4.2.4 | Corección de errores y casos no contemplados Gestión de Citas |  | 30h | 2012-05-03 10:45 | 2012-05-09 08:45 | 281 | 0d |  | Jorge Pires; Jessica Pupillo; Ignacio Cardenas | 90h | 3,870 |
| 283 | 1.2.4.2.5 | Puesta en producción con errores corregidos Chat en Línea | milestone | 0d | 2012-05-09 08:45 | 2012-05-09 08:45 | 282 | 0d |  | Jorge Pires; Jessica Pupillo; Ignacio Cardenas |  |  |
| 284 | 1.2.4.2.6 | Puestra en producción Gestión de Citas | milestone | 0d | 2012-05-09 08:45 | 2012-05-09 08:45 | 283 | 0d |  | Jorge Pires; Jessica Pupillo; Ignacio Cardenas |  |  |
| 285 | 1.2.4.3 | Fin Cuarta Etapa | milestone | 0d | 2012-05-09 08:45 | 2012-05-09 08:45 | 284 | 0d |  |  |  |  |

| ID | WBS | Task | Type | Duration | Start | Finish | Predecessors | Total slack | Free slack | Resources | Work | Cost |
| --- | --- | --- | --- | --- | --- | --- | --- | --- | --- | --- | --- | --- |
| 286 | 1.2.5 | **Quinta Etapa** |  | 6.92d | 2012-05-09 10:45 | 2012-05-16 13:15 | 274 | 0d |  |  | 209h | 3,971 |
| 287 | 1.2.5.1 | **Evaluación de la Productividad** |  | 6.92d | 2012-05-09 10:45 | 2012-05-16 13:15 | 274 | 0d |  |  | 209h | 3,971 |
| 288 | 1.2.5.1.1 | **Toma de Medidas** |  | 6.5d | 2012-05-09 10:45 | 2012-05-16 09:45 | 274 | 0d |  |  | 203h | 3,857 |
| 289 | 1.2.5.1.1.1 | Totalización solicitudes de chat en Línea atendidas |  | 1h | 2012-05-09 10:45 | 2012-05-09 11:45 | 101 | 0d |  | Daniel Conde | 1h | 19 |
| 290 | 1.2.5.1.1.2 | **Medición tiempo espera Operaciones de Atención al cliente** |  | 5d | 2012-05-09 11:45 | 2012-05-15 09:45 | 289 | 0d |  |  | 180h | 3,420 |
| 291 | 1.2.5.1.1.2.1 | Agencia el Rosal |  | 30h | 2012-05-09 11:45 | 2012-05-15 09:45 | 289 | 0d |  | Daniel Conde | 30h | 570 |
| 292 | 1.2.5.1.1.2.2 | Agencia Altamira |  | 30h | 2012-05-09 11:45 | 2012-05-15 09:45 | 289 | 0d |  | Francisco Tiapa | 30h | 570 |
| 293 | 1.2.5.1.1.2.3 | Agencia Cumbres de Curumo |  | 30h | 2012-05-09 11:45 | 2012-05-15 09:45 | 289 | 0d |  | Jesús Miranda | 30h | 570 |
| 294 | 1.2.5.1.1.2.4 | Agencia Santa Fe |  | 30h | 2012-05-09 11:45 | 2012-05-15 09:45 | 289 | 0d |  | Johan Colina | 30h | 570 |
| 295 | 1.2.5.1.1.2.5 | Agencia Boleita |  | 30h | 2012-05-09 11:45 | 2012-05-15 09:45 | 289 | 0d |  | Luis Alfaro | 30h | 570 |
| 296 | 1.2.5.1.1.2.6 | Agencia Oficina Principal |  | 30h | 2012-05-09 11:45 | 2012-05-15 09:45 | 289 | 0d |  | Luis Laurenco | 30h | 570 |
| 297 | 1.2.5.1.1.3 | Totalización mediciones tiempo espera Operaciones de Atención al cliente |  | 2h | 2012-05-15 09:45 | 2012-05-15 11:45 | 290 | 0d |  | Francisco Tiapa; Jesús Miranda | 4h | 76 |
| 298 | 1.2.5.1.1.4 | Comparación de medidas y obtención de conclusiones |  | 6h | 2012-05-15 11:45 | 2012-05-16 09:45 | 297 | 0d |  | Francisco Tiapa; Jesús Miranda; Daniel Conde | 18h | 342 |
| 299 | 1.2.5.1.1.5 | Fin Toma de Medidas | milestone | 0d | 2012-05-16 09:45 | 2012-05-16 09:45 | 298 | 0d |  |  |  |  |
| 300 | 1.2.5.1.2 | Totalización Resultados de encuestas |  | 2h | 2012-05-16 10:15 | 2012-05-16 13:15 | 104 | 2.67d | 0d | Francisco Tiapa; Jesús Miranda; Daniel Conde | 6h | 114 |
| 301 | 1.2.5.1.3 | Fin Evaluación de la Productividad | milestone | 0d | 2012-05-16 13:15 | 2012-05-16 13:15 | 300 | 2.67d | 0d |  |  |  |
| 302 | 1.2.5.2 | Fin Quinta Etapa | milestone | 0d | 2012-05-16 13:15 | 2012-05-16 13:15 | 301 | 2.67d |  |  |  |  |
| 303 | 1.2.6 | Fin Mecanismo en Línea Banco Mercantil | milestone | 0d | 2012-01-09 17:00 | 2012-01-09 17:00 |  | 124.71d |  | Ignacio Cardenas |  |  |
