# WBSCardenas-Torres

Schedule from MS Project, 2011-12-27 to 2012-08-24, 6 hours a day, costs in Bs. F..

## Calendars

- Standard: Mon-Fri 09:00-12:00, 13:00-16:00; Sat-Sun off. Exceptions (off unless hours are given): 2012-02-20 to 2012-02-21 (Carnavales), 2012-04-05 to 2012-04-06 (Semana Santa), 2012-04-19 (19 de Abril), 2012-05-01 (Día del trabajador), 2012-07-05 (Día de la Independencia), 2012-07-24 (Natalicio del Libertador).

## Resources

| Resource | Group | Rate |
| --- | --- | --- |
| Luis Alfaro | Estadista | 19 |
| Luis Laurenco | Estadista | 19 |
| Francisco Tiapa | Estadista | 19 |
| Daniel Conde | Estadista | 19 |
| Johan Colina | Estadista | 19 |
| Jesús Miranda | Estadista | 19 |
| Hector Torres | Gerente de Proyecto | 68 |
| Solsire Torres | Analista de Sistemas | 38 |
| Jessica Pupillo | Desarrollador de Software | 43 |
| Ignacio Cardenas | Desarrollador de Software | 43 |
| Patricia Figueira | Abogado | 300 |
| Joana Pardo | Administrador | 30 |
| Wilmer Soto | Tester | 32 |
| Material de Oficina | Material de Oficina | 2928 |

## Schedule

| ID | WBS | Task | Type | Duration | Start | Finish | Predecessors | Total slack | Resources | Work | Cost |
| --- | --- | --- | --- | --- | --- | --- | --- | --- | --- | --- | --- |
| 1 | 1 | **Mecanismo en linea para Banco Mercantil** |  | 165.74d | 2011-12-27 08:00 | 2012-08-24 14:25 |  | 0d |  | 2029.25h | 102,144.17 |
| 2 | 1.1 | **Gestión de Proyecto** |  | 165.74d | 2011-12-27 08:00 | 2012-08-24 14:25 |  | 0d |  | 334.25h | 19,056.17 |
| 3 | 1.1.1 | **Primera Etapa** |  | 12d | 2011-12-27 08:00 | 2012-01-12 09:00 |  | 0d |  | 85h | 6,384 |
| 4 | 1.1.1.1 | **Visualización, Conceptualización y Definición del Proyecto** |  | 12d | 2011-12-27 08:00 | 2012-01-12 09:00 |  | 0d |  | 85h | 6,384 |
| 5 | 1.1.1.1.1 | Reunión JD Banco Mercantil, levantamiento de requerimientos |  | 30h | 2011-12-27 08:00 | 2012-01-02 10:00 |  | 0d | Hector Torres | 30h | 2,280 |
| 6 | 1.1.1.1.2 | Definición objetivos del proyecto |  | 8h | 2012-01-02 10:00 | 2012-01-03 11:00 | 5 | 0d | Hector Torres | 8h | 608 |
| 7 | 1.1.1.1.3 | Definición Alcance del proyecto |  | 4h | 2012-01-03 11:00 | 2012-01-03 16:00 | 6 | 0d | Hector Torres | 4h | 304 |
| 8 | 1.1.1.1.4 | Diseño estrategia del proyecto |  | 4h | 2012-01-04 08:00 | 2012-01-04 12:00 | 7 | 0d | Hector Torres | 4h | 304 |
| 9 | 1.1.1.1.5 | Identificación de riesgos del proyecto |  | 3h | 2012-01-04 13:00 | 2012-01-04 16:00 | 8 | 0d | Hector Torres | 3h | 228 |
| 10 | 1.1.1.1.6 | Análisis grado de ocurrencia de riesgos |  | 1h | 2012-01-05 08:00 | 2012-01-05 09:00 | 9 | 0d | Hector Torres | 1h | 76 |
| 11 | 1.1.1.1.7 | Análisis de prevención de riesgos |  | 1h | 2012-01-05 09:00 | 2012-01-05 10:00 | 10 | 0d | Hector Torres | 1h | 76 |
| 12 | 1.1.1.1.8 | Planificación de respuesta a los riesgos |  | 3h | 2012-01-05 10:00 | 2012-01-05 14:00 | 11 | 0d | Hector Torres | 3h | 228 |
| 13 | 1.1.1.1.9 | Planificación de la calidad del proyecto |  | 2h | 2012-01-05 14:00 | 2012-01-05 16:00 | 12 | 0d | Hector Torres | 2h | 152 |
| 14 | 1.1.1.1.10 | Entrega de propuesta de proyecto al Banco Mercantil | milestone | 0d | 2012-01-05 16:00 | 2012-01-05 16:00 | 13 | 0d |  |  |  |
| 15 | 1.1.1.1.11 | **Planificación de recursos a utilizar** |  | 0d | 2012-01-06 08:00 | 2012-01-06 09:00 | 14 | 0d |  | 1h | 76 |
| 16 | 1.1.1.1.11.1 | Elaboración lista Material de Oficina |  | 1h | 2012-01-06 08:00 | 2012-01-06 09:00 | 14 | 0d | Hector Torres | 1h | 76 |
| 17 | 1.1.1.1.12 | **Estimación de costos y recursos** |  | 0.33d | 2012-01-06 09:00 | 2012-01-06 11:00 | 15 | 0d |  | 2h | 76 |
| 18 | 1.1.1.1.12.1 | Adquirir presupuesto para material de oficina |  | 2h | 2012-01-06 09:00 | 2012-01-06 11:00 | 16 | 0d | Joana Pardo | 2h | 76 |
| 19 | 1.1.1.1.13 | **Evaluar factibilidad del proyecto** |  | 3.5d | 2012-01-06 11:00 | 2012-01-11 15:00 | 17 | 0d |  | 24h | 1,824 |
| 20 | 1.1.1.1.13.1 | Estudio factibilidad económica |  | 8h | 2012-01-06 11:00 | 2012-01-09 12:00 | 18 | 0d | Hector Torres | 8h | 608 |
| 21 | 1.1.1.1.13.2 | **Estudio de factibilidad de mercado** |  | 1.17d | 2012-01-09 13:00 | 2012-01-10 14:00 | 20 | 0d |  | 8h | 608 |
| 22 | 1.1.1.1.13.2.1 | Análisis de información arrojada por encuesta previa |  | 8h | 2012-01-09 13:00 | 2012-01-10 14:00 | 20 | 0d | Hector Torres | 8h | 608 |
| 23 | 1.1.1.1.13.3 | Estudio factibilidad técnica |  | 8h | 2012-01-10 14:00 | 2012-01-11 15:00 | 21 | 0d | Hector Torres | 8h | 608 |
| 24 | 1.1.1.1.14 | **Conformación del equipo de trabajo** |  | 0.17d | 2012-01-11 15:00 | 2012-01-12 09:00 | 19 | 0d |  | 2h | 152 |
| 25 | 1.1.1.1.14.1 | Establecer roles y responsabilidades de cada uno |  | 1h | 2012-01-11 15:00 | 2012-01-11 16:00 | 23 | 0d | Hector Torres | 1h | 76 |
| 26 | 1.1.1.1.14.2 | Asignar roles a empleados |  | 1h | 2012-01-12 08:00 | 2012-01-12 09:00 | 25 | 0d | Hector Torres | 1h | 76 |
| 27 | 1.1.1.2 | Finalización de la Primera Etapa | milestone | 0d | 2012-01-12 09:00 | 2012-01-12 09:00 | 26 | 0d |  |  |  |

Notes:
- 5: Se recibe un documento donde se plasma el resultado de la revision del estado y la capacidad actual de los servidores del Banco Mercantil

| ID | WBS | Task | Type | Duration | Start | Finish | Predecessors | Total slack | Free slack | Resources | Work | Cost |
| --- | --- | --- | --- | --- | --- | --- | --- | --- | --- | --- | --- | --- |
| 28 | 1.1.2 | **Segunda Etapa** |  | 87.06d | 2012-01-16 08:00 | 2012-05-24 09:20 | 3FS+2d | 0d |  |  | 170.5h | 8,262.17 |
| 29 | 1.1.2.1 | **Inicio toma de medidas** |  | 0.83d | 2012-01-16 08:00 | 2012-01-16 15:00 | 128 | 0d |  |  | 35h | 1,100 |
| 30 | 1.1.2.1.1 | Reunión con Estadistas |  | 6h | 2012-01-16 08:00 | 2012-01-16 15:00 | 128 | 0d |  | Daniel Conde; Francisco Tiapa; Hector Torres; Johan Colina; Luis Alfaro; Luis Laurenco; Jesús Miranda | 35h | 1,100 |
| 31 | 1.1.2.2 | **Seguimiento y control de toma de medidas** |  | 10.75d | 2012-01-23 15:00 | 2012-02-07 13:30 | 29 | 0d |  |  | 12.5h | 482 |
| 32 | 1.1.2.2.1 | **Reunión con equipo de Estadistas** |  | 10.42d | 2012-01-23 15:00 | 2012-02-07 10:30 | 29 | 0d |  |  | 10.5h | 330 |
| 33 | 1.1.2.2.1.1 | Reunión con equipo de Estadistas 1 |  | 30min | 2012-01-23 15:00 | 2012-01-23 15:30 | 139 | 0d |  | Daniel Conde; Francisco Tiapa; Hector Torres; Johan Colina; Luis Alfaro; Luis Laurenco; Jesús Miranda | 3.5h | 110 |
| 34 | 1.1.2.2.1.2 | Generación de reporte de avance 1 | milestone | 0d | 2012-01-23 15:30 | 2012-01-23 15:30 | 33 | 0d |  |  |  |  |
| 35 | 1.1.2.2.1.3 | Reunión con equipo de Estadistas 2 |  | 30min | 2012-01-30 15:30 | 2012-01-30 16:00 | 147 | 0d |  | Francisco Tiapa; Hector Torres; Johan Colina; Luis Alfaro; Luis Laurenco; Jesús Miranda; Daniel Conde | 3.5h | 110 |
| 36 | 1.1.2.2.1.4 | Generación de reporte de avance 2 | milestone | 0d | 2012-01-30 16:00 | 2012-01-30 16:00 | 35 | 0d |  |  |  |  |
| 37 | 1.1.2.2.1.5 | Reunión con equipo de Estadistas 3 |  | 30min | 2012-02-07 10:00 | 2012-02-07 10:30 | 157 | 0d |  | Daniel Conde; Francisco Tiapa; Hector Torres; Johan Colina; Luis Alfaro; Luis Laurenco; Jesús Miranda | 3.5h | 110 |
| 38 | 1.1.2.2.1.6 | Generación de reporte de avance 3 | milestone | 0d | 2012-02-07 10:30 | 2012-02-07 10:30 | 37 | 0d |  |  |  |  |
| 39 | 1.1.2.2.2 | Reunión con JD Banco Mercantil |  | 2h | 2012-02-07 10:30 | 2012-02-07 13:30 | 32 | 0d |  | Hector Torres | 2h | 152 |
| 40 | 1.1.2.2.3 | Entrega Reporte Toma de Medidas | milestone | 0d | 2012-02-07 13:30 | 2012-02-07 13:30 | 39 | 0d |  |  |  |  |
| 41 | 1.1.2.3 | **Inicio Desarrollo del Mecanismo** |  | 1d | 2012-01-16 15:00 | 2012-01-17 15:00 | 29 | 0.08d | 0d |  | 24h | 1,266 |
| 42 | 1.1.2.3.1 | Reunión con equipo de desarrollo |  | 7h | 2012-01-16 15:00 | 2012-01-17 15:00 | 30 | 0.08d | 0d | Hector Torres; Jessica Pupillo; Ignacio Cardenas; Solsire Torres | 24h | 1,266 |
| 43 | 1.1.2.4 | **Seguimiento y control del Desarrollo del Mecanismo** |  | 79.22d | 2012-01-25 15:00 | 2012-05-24 09:20 | 41 | 0d |  |  | 99h | 5,414.17 |
| 44 | 1.1.2.4.1 | **Reunión con Equipo de Desarrollo** |  | 79.06d | 2012-01-25 15:00 | 2012-05-23 15:20 | 41 | 0d |  |  | 90h | 4,730.17 |
| 45 | 1.1.2.4.1.1 | Reunión con equipo de Desarrollo 1 |  | 3h | 2012-01-25 15:00 | 2012-01-26 10:00 | 165 | 0.08d | 0d | Hector Torres; Jessica Pupillo; Ignacio Cardenas; Solsire Torres | 8h | 422 |
| 46 | 1.1.2.4.1.2 | Generación de reporte, "Diseño" | milestone | 0d | 2012-01-26 10:00 | 2012-01-26 10:00 | 45 | 0.08d | 0d |  |  |  |
| 47 | 1.1.2.4.1.3 | Reunión con equipo de Desarrollo 2 |  | 2h | 2012-02-06 10:00 | 2012-02-06 12:00 | 174 | 0.08d | 0d | Hector Torres; Solsire Torres; Jessica Pupillo; Ignacio Cardenas | 8h | 422 |
| 48 | 1.1.2.4.1.4 | Generación de reporte, "Módulo Envío de Mensajes" | milestone | 0d | 2012-02-06 12:00 | 2012-02-06 12:00 | 47 | 0.08d | 0d |  |  |  |
| 49 | 1.1.2.4.1.5 | Reunión con equipo de Desarrollo 3 |  | 2h | 2012-02-07 13:30 | 2012-02-07 15:30 | 181, 40 | 0d |  | Hector Torres; Solsire Torres; Jessica Pupillo; Ignacio Cardenas | 8h | 422 |
| 50 | 1.1.2.4.1.6 | Generación de reporte, "Módulo Historial Chat" | milestone | 0d | 2012-02-07 15:30 | 2012-02-07 15:30 | 49 | 0d |  |  |  |  |
| 51 | 1.1.2.4.1.7 | Reunión con equipo de Desarrollo 4 |  | 2h | 2012-02-09 09:30 | 2012-02-09 11:30 | 190 | 0d |  | Hector Torres; Solsire Torres; Jessica Pupillo; Ignacio Cardenas | 8h | 422 |
| 52 | 1.1.2.4.1.8 | Generación de reporte, "Módulo Encuesta" | milestone | 0d | 2012-02-09 11:30 | 2012-02-09 11:30 | 51 | 0d |  |  |  |  |
| 53 | 1.1.2.4.1.9 | Reunión con equipo de Desarrollo 5 |  | 2.5h | 2012-02-24 11:30 | 2012-02-24 15:00 | 196 | 0d |  | Hector Torres; Jessica Pupillo; Ignacio Cardenas; Solsire Torres | 10h | 527.5 |
| 54 | 1.1.2.4.1.10 | Generación de reporte, "Diseño" | milestone | 0d | 2012-02-24 15:00 | 2012-02-24 15:00 | 53 | 0d |  |  |  |  |
| 55 | 1.1.2.4.1.11 | Reunión con equipo de Desarrollo 6 |  | 2h | 2012-03-08 14:00 | 2012-03-08 16:00 | 206 | 0d |  | Hector Torres; Solsire Torres; Jessica Pupillo; Ignacio Cardenas | 8h | 422 |
| 56 | 1.1.2.4.1.12 | Generación de reporte, "Módulo Especificación Cita" | milestone | 0d | 2012-03-08 16:00 | 2012-03-08 16:00 | 55 | 0d |  |  |  |  |
| 57 | 1.1.2.4.1.13 | Reunión con equipo de Desarrollo 7 |  | 3.67h | 2012-03-30 08:00 | 2012-03-30 11:40 | 216 | 0d |  | Hector Torres; Solsire Torres; Jessica Pupillo; Ignacio Cardenas | 8h | 413.33 |
| 58 | 1.1.2.4.1.14 | Generación de reporte, "Módulo Operaciones Cita" | milestone | 0d | 2012-03-30 11:40 | 2012-03-30 11:40 | 57 | 0d |  |  |  |  |
| 59 | 1.1.2.4.1.15 | Reunión con equipo de Desarrollo 8 |  | 2h | 2012-04-24 11:40 | 2012-04-24 14:40 | 223 | 0d |  | Hector Torres; Solsire Torres; Jessica Pupillo; Ignacio Cardenas | 8h | 422 |
| 60 | 1.1.2.4.1.16 | Generación de reporte, "Módulo Back-end" | milestone | 0d | 2012-04-24 14:40 | 2012-04-24 14:40 | 59 | 0d |  |  |  |  |
| 61 | 1.1.2.4.1.17 | Reunión con equipo de Desarrollo 9 |  | 2h | 2012-04-27 13:40 | 2012-04-27 15:40 | 236 | 0d |  | Hector Torres; Solsire Torres; Jessica Pupillo; Ignacio Cardenas | 8h | 422 |
| 62 | 1.1.2.4.1.18 | Generación de reporte, "Módulo Notificaciones" | milestone | 0d | 2012-04-27 15:40 | 2012-04-27 15:40 | 61 | 0d |  |  |  |  |
| 63 | 1.1.2.4.1.19 | Reunión con equipo de Desarrollo 10 |  | 3.67h | 2012-05-21 15:40 | 2012-05-22 11:20 | 246 | 0d |  | Hector Torres; Solsire Torres; Jessica Pupillo; Ignacio Cardenas | 8h | 413.33 |
| 64 | 1.1.2.4.1.20 | Generación de reporte, "Módulo Documentos" | milestone | 0d | 2012-05-22 11:20 | 2012-05-22 11:20 | 63 | 0d |  |  |  |  |
| 65 | 1.1.2.4.1.21 | Reunión con equipo de Desarrollo 11 |  | 2h | 2012-05-23 13:20 | 2012-05-23 15:20 | 257 | 0d |  | Hector Torres; Solsire Torres; Jessica Pupillo; Ignacio Cardenas | 8h | 422 |
| 66 | 1.1.2.4.1.22 | Generación de reporte, "Módulo Encuestas" | milestone | 0d | 2012-05-23 15:20 | 2012-05-23 15:20 | 65 | 0d |  |  |  |  |

Notes:
- 32: En estas reuniones ademas de informar el rendimiento como parte de la gestion de comunicaciones, se hace el seguimiento y control del cronograma
- 44: En estas reuniones ademas de informar el rendimiento como parte de la gestion de comunicaciones, se tratan los siguientes puntos: / ·Hacer seguimiento y control del alcance del proyecto / ·Hacer seguimiento y control de los riesgos del proyecto / ·Hacer seguimiento y control de calidad del proyecto / ·Hacer seguimiento y control del cronograma

| ID | WBS | Task | Type | Duration | Start | Finish | Predecessors | Total slack | Free slack | Resources | Work | Cost |
| --- | --- | --- | --- | --- | --- | --- | --- | --- | --- | --- | --- | --- |
| 67 | 1.1.2.4.2 | **Reunión con JD Banco Mercantil** |  | 68.64d | 2012-02-09 11:30 | 2012-05-24 09:20 | 52 | 0d |  |  | 9h | 684 |
| 68 | 1.1.2.4.2.1 | Reunión con JD Banco Mercantil 1 |  | 3h | 2012-02-09 11:30 | 2012-02-09 15:30 | 52 | 68.14d | 0d | Hector Torres | 3h | 228 |
| 69 | 1.1.2.4.2.2 | Entrega reporte de avances: Chat en Línea | milestone | 0h | 2012-02-09 15:30 | 2012-02-09 15:30 | 68 | 68.14d |  |  |  |  |
| 70 | 1.1.2.4.2.3 | Reunión con JD Banco Mercantil 2 |  | 2h | 2012-03-30 11:40 | 2012-03-30 14:40 | 58 | 34.28d | 0d | Hector Torres | 2h | 152 |
| 71 | 1.1.2.4.2.4 | Entrega reporte de avances 1: Gestión de Citas | milestone | 0d | 2012-03-30 14:40 | 2012-03-30 14:40 | 70 | 34.28d |  |  |  |  |
| 72 | 1.1.2.4.2.5 | Reunión con JD Banco Mercantil 3 |  | 2h | 2012-04-27 15:40 | 2012-04-30 09:40 | 62 | 16.94d | 0d | Hector Torres | 2h | 152 |
| 73 | 1.1.2.4.2.6 | Entrega reporte de avances 2: Gestión de Citas | milestone | 0d | 2012-04-30 09:40 | 2012-04-30 09:40 | 72 | 16.94d |  |  |  |  |
| 74 | 1.1.2.4.2.7 | Reunión con JD Banco Mercantil 4 |  | 2h | 2012-05-23 15:20 | 2012-05-24 09:20 | 66 | 0d |  | Hector Torres | 2h | 152 |
| 75 | 1.1.2.4.2.8 | Entrega reporte de avances 3: Gestión de Citas | milestone | 0d | 2012-05-24 09:20 | 2012-05-24 09:20 | 74 | 0d |  |  |  |  |
| 76 | 1.1.2.5 | Finalización de la Segunda Etapa | milestone | 0d | 2012-05-24 09:20 | 2012-05-24 09:20 | 75 | 0d |  |  |  |  |
| 77 | 1.1.3 | **Tercera Etapa** |  | 5.54d | 2012-05-24 09:20 | 2012-05-31 13:35 | 28 | 0d |  |  | 15.25h | 859 |
| 78 | 1.1.3.1 | **Capacitación** |  | 0.67d | 2012-05-24 09:20 | 2012-05-24 14:20 | 76 | 0d |  |  | 12h | 672 |
| 79 | 1.1.3.1.1 | Reunión inicial con Capacitadores |  | 4h | 2012-05-24 09:20 | 2012-05-24 14:20 | 76 | 0d |  | Hector Torres; Jessica Pupillo; Ignacio Cardenas | 12h | 672 |
| 80 | 1.1.3.2 | **Seguimiento y control de Capacitación** |  | 1.88d | 2012-05-29 14:20 | 2012-05-31 13:35 | 78 | 0d |  |  | 3.25h | 187 |
| 81 | 1.1.3.2.1 | Reunión con equipo de Capacitación Chat en Línea |  | 30min | 2012-05-29 14:20 | 2012-05-29 14:50 | 263 | 0d |  | Hector Torres; Jessica Pupillo | 1h | 61 |
| 82 | 1.1.3.2.2 | Entrega Manual de Uso a JD Banco Mercantil | milestone | 0d | 2012-05-29 14:50 | 2012-05-29 14:50 | 81 | 1.79d |  |  |  |  |
| 83 | 1.1.3.2.3 | Reunión con equipo de Capacitación Gestión de Citas |  | 45min | 2012-05-31 11:50 | 2012-05-31 13:35 | 273 | 0d |  | Hector Torres; Jessica Pupillo; Ignacio Cardenas | 2.25h | 126 |
| 84 | 1.1.3.2.4 | Entrega Manual de Uso a JD Banco Mercantil | milestone | 0d | 2012-05-31 13:35 | 2012-05-31 13:35 | 83 | 0d |  |  |  |  |
| 85 | 1.1.3.3 | Finalización Tercera Etapa | milestone | 0d | 2012-05-31 13:35 | 2012-05-31 13:35 | 84 | 0d |  |  |  |  |
| 86 | 1.1.4 | **Cuarta Etapa** |  | 9.89d | 2012-06-04 13:35 | 2012-06-18 11:55 | 77FS+2d | 0d |  |  | 26h | 1,557 |
| 87 | 1.1.4.1 | **Implementación** |  | 0.17d | 2012-06-04 13:35 | 2012-06-04 14:35 | 85 | 0d |  |  | 4h | 211 |
| 88 | 1.1.4.1.1 | Reunión Plan de implementación |  | 1h | 2012-06-04 13:35 | 2012-06-04 14:35 | 85 | 0d |  | Hector Torres; Jessica Pupillo; Ignacio Cardenas; Solsire Torres | 4h | 211 |
| 89 | 1.1.4.2 | **Seguimiento y control de implementación** |  | 6.72d | 2012-06-07 14:35 | 2012-06-18 11:55 | 87 | 0d |  |  | 22h | 1,346 |
| 90 | 1.1.4.2.1 | **Reunión con Equipo de Desarrollo** |  | 5.39d | 2012-06-07 14:35 | 2012-06-15 09:55 | 87 | 0d |  |  | 7h | 392 |
| 91 | 1.1.4.2.1.1 | Reunión con equipo de Desarrollo 1 |  | 1h | 2012-06-07 14:35 | 2012-06-07 15:35 | 281 | 0d |  | Hector Torres; Jessica Pupillo; Ignacio Cardenas | 3h | 168 |
| 92 | 1.1.4.2.1.2 | Generación de reportes de errores: Chat en Línea | milestone | 0d | 2012-06-07 15:35 | 2012-06-07 15:35 | 91 | 0d |  | Hector Torres |  |  |
| 93 | 1.1.4.2.1.3 | Reunión con equipo de Desarrollo 2 |  | 2.25h | 2012-06-14 15:35 | 2012-06-15 09:55 | 282 | 0d |  | Hector Torres; Jessica Pupillo; Ignacio Cardenas | 4h | 224 |
| 94 | 1.1.4.2.1.4 | Generación de reporte de errores: Gestión de Citas | milestone | 0d | 2012-06-15 09:55 | 2012-06-15 09:55 | 93 | 0d |  | Hector Torres |  |  |

Notes:
- 80: En estas reuniones ademas de informar el rendimiento como parte de la gestion de comunicaciones, se hace el seguimiento y control del cronograma
- 90: Estas reuniones forman parte de la gestion de comunicaciones y al informar acerca de los errores captados se verifica el alcance y se hace un control de la calidad del proyecto.

| ID | WBS | Task | Type | Duration | Start | Finish | Predecessors | Total slack | Resources | Work | Cost |
| --- | --- | --- | --- | --- | --- | --- | --- | --- | --- | --- | --- |
| 95 | 1.1.4.2.2 | **Post- Implementación** |  | 1.33d | 2012-06-15 09:55 | 2012-06-18 11:55 | 90 | 0d |  | 15h | 954 |
| 96 | 1.1.4.2.2.1 | Generación de reporte de errores y casos no contemplados |  | 4h | 2012-06-15 09:55 | 2012-06-15 14:55 | 94 | 0d | Hector Torres | 4h | 304 |
| 97 | 1.1.4.2.2.2 | Reunión con Banco Mercantil para priorizar errores |  | 3h | 2012-06-15 14:55 | 2012-06-18 09:55 | 96 | 0d | Hector Torres | 3h | 228 |
| 98 | 1.1.4.2.2.3 | Reunión con el equipo de Trabajo |  | 2h | 2012-06-18 09:55 | 2012-06-18 11:55 | 97 | 0d | Hector Torres; Jessica Pupillo; Ignacio Cardenas; Solsire Torres | 8h | 422 |
| 99 | 1.1.4.3 | Finalización de la Cuarta Etapa | milestone | 0d | 2012-06-18 11:55 | 2012-06-18 11:55 | 98 | 38d |  |  |  |
| 100 | 1.1.5 | **Quinta Etapa** |  | 9.25d | 2012-08-13 11:55 | 2012-08-24 14:25 | 86 | 0d |  | 37.5h | 1,994 |
| 101 | 1.1.5.1 | **Evaluación de Productividad** |  | 7.58d | 2012-08-13 11:55 | 2012-08-23 09:25 | 99 | 0d |  | 24.5h | 1,082 |
| 102 | 1.1.5.1.1 | **Toma de medidas** |  | 0.33d | 2012-08-13 11:55 | 2012-08-13 14:55 | 99 | 0d |  | 14h | 440 |
| 103 | 1.1.5.1.1.1 | Reunión con Estadistas |  | 2h | 2012-08-13 11:55 | 2012-08-13 14:55 | 287FS+30d | 0d | Daniel Conde; Francisco Tiapa; Hector Torres; Johan Colina; Luis Alfaro; Luis Laurenco; Jesús Miranda | 14h | 440 |
| 104 | 1.1.5.1.2 | **Seguimiento y control de toma de medidas** |  | 0.42d | 2012-08-21 15:55 | 2012-08-22 11:25 | 102 | 0d |  | 5.5h | 262 |
| 105 | 1.1.5.1.2.1 | Reunión con equipo de Estadistas |  | 55min | 2012-08-21 15:55 | 2012-08-22 09:25 | 301 | 0d | Daniel Conde; Francisco Tiapa; Hector Torres; Johan Colina; Luis Alfaro; Luis Laurenco; Jesús Miranda | 3.5h | 110 |
| 106 | 1.1.5.1.2.2 | Generación de reportes de estadísticas | milestone | 0d | 2012-08-22 09:25 | 2012-08-22 09:25 | 105 | 0d |  |  |  |
| 107 | 1.1.5.1.2.3 | Reunión con JD Banco Mercantil |  | 2h | 2012-08-22 09:25 | 2012-08-22 11:25 | 106 | 0d | Hector Torres | 2h | 152 |
| 108 | 1.1.5.1.2.4 | Entrega Reporte Toma de Medidas | milestone | 0d | 2012-08-22 11:25 | 2012-08-22 11:25 | 107 | 0d |  |  |  |
| 109 | 1.1.5.1.3 | **Análisis datos obtenidos por las encuestas** |  | 0.67d | 2012-08-22 11:25 | 2012-08-23 09:25 | 104 | 0d |  | 5h | 380 |
| 110 | 1.1.5.1.3.1 | Generar informe de resultado de encuestas |  | 3h | 2012-08-22 11:25 | 2012-08-22 15:25 |  | 0d | Hector Torres | 3h | 228 |
| 111 | 1.1.5.1.3.2 | Reunión con JD Banco Mercantil para presentar resultados de encuesta |  | 2h | 2012-08-22 15:25 | 2012-08-23 09:25 | 110 | 0d | Hector Torres | 2h | 152 |
| 112 | 1.1.5.1.4 | Fin de Evaluación de Productividad | milestone | 0d | 2012-08-23 09:25 | 2012-08-23 09:25 | 111 | 0d |  |  |  |
| 113 | 1.1.5.2 | **Cierre del Proyecto** |  | 1.67d | 2012-08-23 09:25 | 2012-08-24 14:25 | 101 | 0d |  | 13h | 912 |
| 114 | 1.1.5.2.1 | Verificación del cumplimiento de los objetivos |  | 2h | 2012-08-23 09:25 | 2012-08-23 11:25 | 112 | 0d | Hector Torres | 2h | 152 |
| 115 | 1.1.5.2.2 | Elaboración de Informe Final del Proyecto |  | 4h | 2012-08-23 11:25 | 2012-08-24 08:25 | 114 | 0d | Hector Torres | 4h | 304 |
| 116 | 1.1.5.2.3 | Reunión final con JD Banco Mercantil |  | 3h | 2012-08-24 08:25 | 2012-08-24 11:25 | 115 | 0d | Hector Torres | 3h | 228 |
| 117 | 1.1.5.2.4 | Cierre Administrativo |  | 2h | 2012-08-24 11:25 | 2012-08-24 14:25 | 116 | 0d | Hector Torres; Joana Pardo | 4h | 228 |
| 118 | 1.1.5.2.5 | Fin Cierre del Proyecto | milestone | 0d | 2012-08-24 14:25 | 2012-08-24 14:25 | 117 | 0d |  |  |  |
| 119 | 1.1.5.3 | Finalización de la Quinta Etapa | milestone | 0d | 2012-08-24 14:25 | 2012-08-24 14:25 | 118 | 0d |  |  |  |
| 120 | 1.1.6 | Fin Gestión de Proyecto | milestone | 0d | 2012-08-24 14:25 | 2012-08-24 14:25 | 119 | 0d |  |  |  |

Notes:
- 104: En estas reuniones ademas de informar el rendimiento como parte de la gestion de comunicaciones, se hace el seguimiento y control del cronograma

| ID | WBS | Task | Type | Duration | Start | Finish | Predecessors | Total slack | Free slack | Resources | Work | Cost |
| --- | --- | --- | --- | --- | --- | --- | --- | --- | --- | --- | --- | --- |
| 121 | 1.2 | **Mecanismo en Línea Banco Mercantil** |  | 151.4d | 2012-01-12 09:00 | 2012-08-22 11:25 | 3 | 0.17d |  |  | 1695h | 83,088 |
| 122 | 1.2.1 | **Primera Etapa** |  | 1.83d | 2012-01-12 09:00 | 2012-01-13 15:00 | 3 | 0.17d |  |  | 16h | 24,024 |
| 123 | 1.2.1.1 | **Material de Oficina** |  | 0.67d | 2012-01-12 09:00 | 2012-01-12 14:00 | 3 | 1.33d | 1.17d |  | 4h | 20,648 |
| 124 | 1.2.1.1.1 | Compra Material de Oficina |  | 4h | 2012-01-12 09:00 | 2012-01-12 14:00 | 27 | 1.33d |  | Joana Pardo; Material de Oficina [700%] | 4h | 20,648 |
| 125 | 1.2.1.2 | **Contrato** |  | 1.83d | 2012-01-12 09:00 | 2012-01-13 15:00 | 3 | 0.17d | 0d |  | 12h | 3,376 |
| 126 | 1.2.1.2.1 | Elaboración Contrato |  | 6h | 2012-01-12 09:00 | 2012-01-12 16:00 | 27 | 0.17d | 0d | Patricia Figueira | 6h | 1,800 |
| 127 | 1.2.1.2.2 | Firma Contrato |  | 6h | 2012-01-13 08:00 | 2012-01-13 15:00 | 126 | 0.17d |  | Hector Torres; Patricia Figueira | 6h | 1,576 |
| 128 | 1.2.1.3 | Fin Primera Etapa | milestone | 0d | 2012-01-13 15:00 | 2012-01-13 15:00 | 123, 125 | 0.17d |  |  |  |  |
| 129 | 1.2.2 | **Segunda Etapa** |  | 85.72d | 2012-01-16 15:00 | 2012-05-23 13:20 | 122 | 0d |  |  | 1231h | 42,878 |
| 130 | 1.2.2.1 | **Toma de Medidas** |  | 15.33d | 2012-01-16 15:00 | 2012-02-07 10:00 | 29 | 0d |  |  | 543h | 13,032 |
| 131 | 1.2.2.1.1 | **Medición tiempo espera Operaciones de Atención al cliente** |  | 15.17d | 2012-01-16 15:00 | 2012-02-06 16:00 | 30 | 0d |  |  | 540h | 12,960 |
| 132 | 1.2.2.1.1.1 | **Primera Semana** |  | 5d | 2012-01-16 15:00 | 2012-01-23 15:00 | 30 | 0d |  |  | 180h | 4,320 |
| 133 | 1.2.2.1.1.1.1 | Agencia el Rosal |  | 30h | 2012-01-16 15:00 | 2012-01-23 15:00 | 30 | 0d |  | Daniel Conde | 30h | 720 |
| 134 | 1.2.2.1.1.1.2 | Agencia Altamira |  | 30h | 2012-01-16 15:00 | 2012-01-23 15:00 | 30 | 0d |  | Francisco Tiapa | 30h | 720 |
| 135 | 1.2.2.1.1.1.3 | Agencia Cumbres de Curumo |  | 30h | 2012-01-16 15:00 | 2012-01-23 15:00 | 30 | 0d |  | Jesús Miranda | 30h | 720 |
| 136 | 1.2.2.1.1.1.4 | Agencia Santa Fe |  | 30h | 2012-01-16 15:00 | 2012-01-23 15:00 | 30 | 0d |  | Johan Colina | 30h | 720 |
| 137 | 1.2.2.1.1.1.5 | Agencia Boleita |  | 30h | 2012-01-16 15:00 | 2012-01-23 15:00 | 30 | 0d |  | Luis Alfaro | 30h | 720 |
| 138 | 1.2.2.1.1.1.6 | Agencia Oficina Principal |  | 30h | 2012-01-16 15:00 | 2012-01-23 15:00 | 30 | 0d |  | Luis Laurenco | 30h | 720 |
| 139 | 1.2.2.1.1.2 | Fin Primera Semana | milestone | 0d | 2012-01-23 15:00 | 2012-01-23 15:00 | 132 | 0d |  |  |  |  |
| 140 | 1.2.2.1.1.3 | **Segunda Semana** |  | 5d | 2012-01-23 15:30 | 2012-01-30 15:30 | 34 | 0d |  |  | 180h | 4,320 |
| 141 | 1.2.2.1.1.3.1 | Agencia el Rosal |  | 30h | 2012-01-23 15:30 | 2012-01-30 15:30 | 34 | 0d |  | Daniel Conde | 30h | 720 |
| 142 | 1.2.2.1.1.3.2 | Agencia Altamira |  | 30h | 2012-01-23 15:30 | 2012-01-30 15:30 | 34 | 0d |  | Francisco Tiapa | 30h | 720 |
| 143 | 1.2.2.1.1.3.3 | Agencia Cumbres de Curumo |  | 30h | 2012-01-23 15:30 | 2012-01-30 15:30 | 34 | 0d |  | Jesús Miranda | 30h | 720 |
| 144 | 1.2.2.1.1.3.4 | Agencia Santa Fe |  | 30h | 2012-01-23 15:30 | 2012-01-30 15:30 | 34 | 0d |  | Johan Colina | 30h | 720 |
| 145 | 1.2.2.1.1.3.5 | Agencia Boleita |  | 30h | 2012-01-23 15:30 | 2012-01-30 15:30 | 34 | 0d |  | Luis Alfaro | 30h | 720 |
| 146 | 1.2.2.1.1.3.6 | Agencia Oficina Principal |  | 30h | 2012-01-23 15:30 | 2012-01-30 15:30 | 34 | 0d |  | Luis Laurenco | 30h | 720 |
| 147 | 1.2.2.1.1.4 | Fin Segunda Semana | milestone | 0d | 2012-01-30 15:30 | 2012-01-30 15:30 | 140 | 0d |  |  |  |  |

Notes:
- 124: El costo unitario del Material de Oficina es el total mensual. Se compran 7 unidades para cubrir la duración estimada del proyecto.

| ID | WBS | Task | Type | Duration | Start | Finish | Predecessors | Total slack | Free slack | Resources | Work | Cost |
| --- | --- | --- | --- | --- | --- | --- | --- | --- | --- | --- | --- | --- |
| 148 | 1.2.2.1.1.5 | **Tercera Semana** |  | 5d | 2012-01-31 09:00 | 2012-02-06 16:00 | 36 | 0d |  |  | 180h | 4,320 |
| 149 | 1.2.2.1.1.5.1 | Agencia el Rosal |  | 30h | 2012-01-31 09:00 | 2012-02-06 16:00 | 36 | 0d |  | Daniel Conde | 30h | 720 |
| 150 | 1.2.2.1.1.5.2 | Agencia Altamira |  | 30h | 2012-01-31 09:00 | 2012-02-06 16:00 | 36 | 0d |  | Francisco Tiapa | 30h | 720 |
| 151 | 1.2.2.1.1.5.3 | Agencia Cumbres de Curumo |  | 30h | 2012-01-31 09:00 | 2012-02-06 16:00 | 36 | 0d |  | Jesús Miranda | 30h | 720 |
| 152 | 1.2.2.1.1.5.4 | Agencia Santa Fe |  | 30h | 2012-01-31 09:00 | 2012-02-06 16:00 | 36 | 0d |  | Johan Colina | 30h | 720 |
| 153 | 1.2.2.1.1.5.5 | Agencia Boleita |  | 30h | 2012-01-31 09:00 | 2012-02-06 16:00 | 36 | 0d |  | Luis Alfaro | 30h | 720 |
| 154 | 1.2.2.1.1.5.6 | Agencia Oficina Principal |  | 30h | 2012-01-31 09:00 | 2012-02-06 16:00 | 36 | 0d |  | Luis Laurenco | 30h | 720 |
| 155 | 1.2.2.1.1.6 | Fin Tercera Semana | milestone | 0d | 2012-02-06 16:00 | 2012-02-06 16:00 | 148 | 0d |  |  |  |  |
| 156 | 1.2.2.1.2 | Totalización Llamadas atendidas en call center |  | 1h | 2012-02-07 09:00 | 2012-02-07 10:00 | 131 | 71.56d | 0d | Luis Laurenco | 1h | 24 |
| 157 | 1.2.2.1.3 | Totalización mediciones tiempo espera Operaciones de Atención al cliente |  | 1h | 2012-02-07 09:00 | 2012-02-07 10:00 | 131, 156 | 0d |  | Johan Colina; Luis Alfaro | 2h | 48 |
| 158 | 1.2.2.1.4 | Fin Toma de Medidas | milestone | 0d | 2012-02-07 10:00 | 2012-02-07 10:00 | 157, 156 | 71.56d |  |  |  |  |
| 159 | 1.2.2.2 | **Desarollo del Mecanismo** |  | 84.72d | 2012-01-17 15:00 | 2012-05-23 13:20 | 41 | 0d |  |  | 688h | 29,846 |
| 160 | 1.2.2.2.1 | **Chat en Línea** |  | 16.25d | 2012-01-17 15:00 | 2012-02-09 09:30 | 42 | 0d |  |  | 120h | 5,214 |
| 161 | 1.2.2.2.1.1 | **Diseño** |  | 6d | 2012-01-17 15:00 | 2012-01-25 15:00 | 42 | 0.08d | 0.33d |  | 36h | 1,548 |
| 162 | 1.2.2.2.1.1.1 | Modularización |  | 12h | 2012-01-17 15:00 | 2012-01-19 15:00 | 42 | 0.08d | 0d | Solsire Torres | 12h | 516 |
| 163 | 1.2.2.2.1.1.2 | Diseño Entidad - Relación |  | 6h | 2012-01-19 15:00 | 2012-01-20 15:00 | 162 | 0.08d | 0d | Solsire Torres | 6h | 258 |
| 164 | 1.2.2.2.1.1.3 | Diseño del Sistema |  | 18h | 2012-01-20 15:00 | 2012-01-25 15:00 | 163 | 0.08d | 0d | Solsire Torres | 18h | 774 |
| 165 | 1.2.2.2.1.1.4 | Fin de Diseño | milestone | 0d | 2012-01-25 15:00 | 2012-01-25 15:00 | 164 | 0.08d | 0d |  |  |  |
| 166 | 1.2.2.2.1.2 | **Módulo Envío de Mensajes** |  | 7d | 2012-01-26 10:00 | 2012-02-06 10:00 | 161 | 0.08d | 0.33d |  | 66h | 2,892 |
| 167 | 1.2.2.2.1.2.1 | Interfaz Usuario |  | 12h | 2012-01-26 10:00 | 2012-01-30 10:00 | 46 | 0.08d | 0d | Jessica Pupillo; Ignacio Cardenas | 24h | 1,104 |
| 168 | 1.2.2.2.1.2.2 | Interfazo Operador |  | 6h | 2012-01-30 10:00 | 2012-01-31 10:00 | 167 | 0.08d | 0d | Jessica Pupillo; Ignacio Cardenas | 12h | 552 |
| 169 | 1.2.2.2.1.2.3 | Conexión/ Desconexión |  | 6h | 2012-01-31 10:00 | 2012-02-01 10:00 | 168 | 0.08d | 0d | Jessica Pupillo; Ignacio Cardenas | 12h | 552 |
| 170 | 1.2.2.2.1.2.4 | **Pruebas** |  | 3d | 2012-02-01 10:00 | 2012-02-06 10:00 | 169 | 0.08d |  |  | 18h | 684 |
| 171 | 1.2.2.2.1.2.4.1 | Pruebas Unitarias |  | 6h | 2012-02-01 10:00 | 2012-02-02 10:00 | 169 | 0.08d | 0d | Wilmer Soto | 6h | 228 |
| 172 | 1.2.2.2.1.2.4.2 | Pruebas Funcionales |  | 6h | 2012-02-02 10:00 | 2012-02-03 10:00 | 171 | 0.08d | 0d | Wilmer Soto | 6h | 228 |
| 173 | 1.2.2.2.1.2.4.3 | Pruebas de rendimiento |  | 6h | 2012-02-03 10:00 | 2012-02-06 10:00 | 172 | 0.08d | 0d | Wilmer Soto | 6h | 228 |
| 174 | 1.2.2.2.1.2.5 | Fin de Módulo Envío de Mensajes | milestone | 0d | 2012-02-06 10:00 | 2012-02-06 10:00 | 173 | 0.08d | 0d |  |  |  |

| ID | WBS | Task | Type | Duration | Start | Finish | Predecessors | Total slack | Free slack | Resources | Work | Cost |
| --- | --- | --- | --- | --- | --- | --- | --- | --- | --- | --- | --- | --- |
| 175 | 1.2.2.2.1.3 | **Módulo Historial Chat** |  | 1d | 2012-02-06 13:00 | 2012-02-07 12:00 | 166 | 0.08d | 0.42d |  | 9h | 390 |
| 176 | 1.2.2.2.1.3.1 | Correo electrónico con historial de chat |  | 3h | 2012-02-06 13:00 | 2012-02-06 16:00 | 48 | 0.08d | 0d | Jessica Pupillo; Ignacio Cardenas | 6h | 276 |
| 177 | 1.2.2.2.1.3.2 | **Pruebas** |  | 0.5d | 2012-02-07 09:00 | 2012-02-07 12:00 | 176 | 0.08d |  |  | 3h | 114 |
| 178 | 1.2.2.2.1.3.2.1 | Pruebas Unitarias |  | 1h | 2012-02-07 09:00 | 2012-02-07 10:00 | 176 | 0.08d | 0d | Wilmer Soto | 1h | 38 |
| 179 | 1.2.2.2.1.3.2.2 | Pruebas Funcionales |  | 1h | 2012-02-07 10:00 | 2012-02-07 11:00 | 178 | 0.08d | 0d | Wilmer Soto | 1h | 38 |
| 180 | 1.2.2.2.1.3.2.3 | Pruebas de rendimiento |  | 1h | 2012-02-07 11:00 | 2012-02-07 12:00 | 179 | 0.08d | 0d | Wilmer Soto | 1h | 38 |
| 181 | 1.2.2.2.1.3.3 | Fin de Módulo Historial Chat | milestone | 0d | 2012-02-07 12:00 | 2012-02-07 12:00 | 180 | 0.08d |  |  |  |  |
| 182 | 1.2.2.2.1.4 | **Módulo Encuesta** |  | 1.17d | 2012-02-07 15:30 | 2012-02-09 09:30 | 175 | 0d |  |  | 9h | 384 |
| 183 | 1.2.2.2.1.4.1 | Diseño Encuesta |  | 2h | 2012-02-07 15:30 | 2012-02-08 10:30 | 50 | 0d |  | Solsire Torres | 2h | 86 |
| 184 | 1.2.2.2.1.4.2 | Envío de correo electrónico con encuesta |  | 2h | 2012-02-08 10:30 | 2012-02-08 13:30 | 183 | 0d |  | Jessica Pupillo; Ignacio Cardenas | 4h | 184 |
| 185 | 1.2.2.2.1.4.3 | **Pruebas** |  | 0.5d | 2012-02-08 13:30 | 2012-02-09 09:30 | 184 | 0d |  |  | 3h | 114 |
| 186 | 1.2.2.2.1.4.3.1 | Pruebas Unitarias |  | 1h | 2012-02-08 13:30 | 2012-02-08 14:30 | 184 | 0d |  | Wilmer Soto | 1h | 38 |
| 187 | 1.2.2.2.1.4.3.2 | Pruebas Funcionales |  | 1h | 2012-02-08 14:30 | 2012-02-08 15:30 | 186 | 0d |  | Wilmer Soto | 1h | 38 |
| 188 | 1.2.2.2.1.4.3.3 | Pruebas de rendimiento |  | 1h | 2012-02-08 15:30 | 2012-02-09 09:30 | 187 | 0d |  | Wilmer Soto | 1h | 38 |
| 189 | 1.2.2.2.1.4.4 | Fin de Módulo Encuesta | milestone | 0d | 2012-02-09 09:30 | 2012-02-09 09:30 | 188 | 0d |  |  |  |  |
| 190 | 1.2.2.2.1.5 | Fin Chat en Línea | milestone | 0d | 2012-02-09 09:30 | 2012-02-09 09:30 | 189 | 0d |  |  |  |  |
| 191 | 1.2.2.2.2 | **Gestión de citas** |  | 68.14d | 2012-02-09 11:30 | 2012-05-23 13:20 | 160 | 0d |  |  | 568h | 24,632 |
| 192 | 1.2.2.2.2.1 | **Diseño** |  | 9d | 2012-02-09 11:30 | 2012-02-24 11:30 | 160 | 0d |  |  | 54h | 2,322 |
| 193 | 1.2.2.2.2.1.1 | Modularización |  | 18h | 2012-02-09 11:30 | 2012-02-14 11:30 | 52 | 0d |  | Solsire Torres | 18h | 774 |
| 194 | 1.2.2.2.2.1.2 | Diseño Entidad - Relación |  | 12h | 2012-02-14 11:30 | 2012-02-16 11:30 | 193 | 0d |  | Solsire Torres | 12h | 516 |
| 195 | 1.2.2.2.2.1.3 | Diseño del sistema |  | 24h | 2012-02-16 11:30 | 2012-02-24 11:30 | 194 | 0d |  | Solsire Torres | 24h | 1,032 |
| 196 | 1.2.2.2.2.1.4 | Fin de Diseño | milestone | 0d | 2012-02-24 11:30 | 2012-02-24 11:30 | 195 | 0d |  |  |  |  |
| 197 | 1.2.2.2.2.2 | **Módulo Especificación Cita** |  | 8.83d | 2012-02-24 15:00 | 2012-03-08 14:00 | 192 | 0d |  |  | 76h | 3,256 |
| 198 | 1.2.2.2.2.2.1 | Funcionalidad: Búsqueda de Agencia |  | 4h | 2012-02-24 15:00 | 2012-02-27 12:00 | 54 | 0d |  | Jessica Pupillo; Ignacio Cardenas | 8h | 368 |
| 199 | 1.2.2.2.2.2.2 | Funcionalidad: Selección de Operaciones a Realizar |  | 3h | 2012-02-27 13:00 | 2012-02-27 16:00 | 198 | 0d |  | Jessica Pupillo; Ignacio Cardenas | 6h | 276 |
| 200 | 1.2.2.2.2.2.3 | Funcionalidad: Selección Fecha y Hora de cita |  | 12h | 2012-02-28 09:00 | 2012-02-29 16:00 | 199 | 0d |  | Jessica Pupillo; Ignacio Cardenas | 24h | 1,104 |
| 201 | 1.2.2.2.2.2.4 | Funcionalidad: Verificación datos del cliente |  | 4h | 2012-03-01 09:00 | 2012-03-01 14:00 | 200 | 0d |  | Jessica Pupillo; Ignacio Cardenas | 8h | 368 |

| ID | WBS | Task | Type | Duration | Start | Finish | Predecessors | Total slack | Resources | Work | Cost |
| --- | --- | --- | --- | --- | --- | --- | --- | --- | --- | --- | --- |
| 202 | 1.2.2.2.2.2.5 | **Pruebas** |  | 5d | 2012-03-01 14:00 | 2012-03-08 14:00 | 201 | 0d |  | 30h | 1,140 |
| 203 | 1.2.2.2.2.2.5.1 | Pruebas Unitarias |  | 12h | 2012-03-01 14:00 | 2012-03-05 14:00 | 201 | 0d | Wilmer Soto | 12h | 456 |
| 204 | 1.2.2.2.2.2.5.2 | Pruebas Funcionales |  | 12h | 2012-03-05 14:00 | 2012-03-07 14:00 | 203 | 0d | Wilmer Soto | 12h | 456 |
| 205 | 1.2.2.2.2.2.5.3 | Pruebas de rendimiento |  | 6h | 2012-03-07 14:00 | 2012-03-08 14:00 | 204 | 0d | Wilmer Soto | 6h | 228 |
| 206 | 1.2.2.2.2.2.6 | Fin de Especificación Cita | milestone | 0d | 2012-03-08 14:00 | 2012-03-08 14:00 | 205 | 0d |  |  |  |
| 207 | 1.2.2.2.2.3 | **Módulo Operaciones de Cita** |  | 15d | 2012-03-09 09:00 | 2012-03-29 16:00 | 197 | 0d |  | 138h | 6,012 |
| 208 | 1.2.2.2.2.3.1 | Crear Cita |  | 24h | 2012-03-09 09:00 | 2012-03-14 16:00 | 56 | 0d | Jessica Pupillo; Ignacio Cardenas | 48h | 2,208 |
| 209 | 1.2.2.2.2.3.2 | Cancelar Cita |  | 6h | 2012-03-15 09:00 | 2012-03-15 16:00 | 208 | 0d | Jessica Pupillo; Ignacio Cardenas | 12h | 552 |
| 210 | 1.2.2.2.2.3.3 | Modificar Cita |  | 12h | 2012-03-16 09:00 | 2012-03-19 16:00 | 209 | 0d | Jessica Pupillo; Ignacio Cardenas | 24h | 1,104 |
| 211 | 1.2.2.2.2.3.4 | Consultar Cita |  | 6h | 2012-03-20 09:00 | 2012-03-20 16:00 | 210 | 0d | Jessica Pupillo; Ignacio Cardenas | 12h | 552 |
| 212 | 1.2.2.2.2.3.5 | **Pruebas** |  | 7d | 2012-03-21 09:00 | 2012-03-29 16:00 | 211 | 0d |  | 42h | 1,596 |
| 213 | 1.2.2.2.2.3.5.1 | Pruebas Unitarias |  | 18h | 2012-03-21 09:00 | 2012-03-23 16:00 | 211 | 0d | Wilmer Soto | 18h | 684 |
| 214 | 1.2.2.2.2.3.5.2 | Pruebas Funcionales |  | 18h | 2012-03-26 09:00 | 2012-03-28 16:00 | 213 | 0d | Wilmer Soto | 18h | 684 |
| 215 | 1.2.2.2.2.3.5.3 | Pruebas de rendimiento |  | 6h | 2012-03-29 09:00 | 2012-03-29 16:00 | 214 | 0d | Wilmer Soto | 6h | 228 |
| 216 | 1.2.2.2.2.3.6 | Fin de Operaciones de Cita | milestone | 0d | 2012-03-29 16:00 | 2012-03-29 16:00 | 215 | 0d |  |  |  |
| 217 | 1.2.2.2.2.4 | **Módulo Back-end** |  | 14d | 2012-03-30 11:40 | 2012-04-24 11:40 | 207 | 0d |  | 126h | 5,460 |
| 218 | 1.2.2.2.2.4.1 | Desarrollo Módulo |  | 42h | 2012-03-30 11:40 | 2012-04-12 11:40 | 58 | 0d | Jessica Pupillo; Ignacio Cardenas | 84h | 3,864 |
| 219 | 1.2.2.2.2.4.2 | **Pruebas** |  | 7d | 2012-04-12 11:40 | 2012-04-24 11:40 | 218 | 0d |  | 42h | 1,596 |
| 220 | 1.2.2.2.2.4.2.1 | Pruebas Unitarias |  | 18h | 2012-04-12 11:40 | 2012-04-17 11:40 | 218 | 0d | Wilmer Soto | 18h | 684 |
| 221 | 1.2.2.2.2.4.2.2 | Pruebas Funcionales |  | 18h | 2012-04-17 11:40 | 2012-04-23 11:40 | 220 | 0d | Wilmer Soto | 18h | 684 |
| 222 | 1.2.2.2.2.4.2.3 | Pruebas de rendimiento |  | 6h | 2012-04-23 11:40 | 2012-04-24 11:40 | 221 | 0d | Wilmer Soto | 6h | 228 |
| 223 | 1.2.2.2.2.4.3 | Fin Back-end | milestone | 0d | 2012-04-24 11:40 | 2012-04-24 11:40 | 222 | 0d |  |  |  |
| 224 | 1.2.2.2.2.5 | **Módulo de Notificaciones** |  | 2.83d | 2012-04-24 14:40 | 2012-04-27 13:40 | 217 | 0d |  | 27h | 1,186 |
| 225 | 1.2.2.2.2.5.1 | **Notificación Cliente** |  | 1d | 2012-04-24 14:40 | 2012-04-25 14:40 | 60 | 0d |  | 12h | 552 |
| 226 | 1.2.2.2.2.5.1.1 | Correo electrónico al momento de crear Cita |  | 2h | 2012-04-24 14:40 | 2012-04-25 09:40 | 60 | 0d | Jessica Pupillo; Ignacio Cardenas | 4h | 184 |
| 227 | 1.2.2.2.2.5.1.2 | Correo electrónico 1 día antes de Cita |  | 2h | 2012-04-25 09:40 | 2012-04-25 11:40 | 226 | 0d | Jessica Pupillo; Ignacio Cardenas | 4h | 184 |
| 228 | 1.2.2.2.2.5.1.3 | SMS 1 día antes de Cita |  | 2h | 2012-04-25 11:40 | 2012-04-25 14:40 | 227 | 0d | Jessica Pupillo; Ignacio Cardenas | 4h | 184 |

| ID | WBS | Task | Type | Duration | Start | Finish | Predecessors | Total slack | Resources | Work | Cost |
| --- | --- | --- | --- | --- | --- | --- | --- | --- | --- | --- | --- |
| 229 | 1.2.2.2.2.5.2 | **Notificación Agente Bancario** |  | 0.67d | 2012-04-25 14:40 | 2012-04-26 11:40 | 225 | 0d |  | 8h | 368 |
| 230 | 1.2.2.2.2.5.2.1 | Mensaje Interno |  | 2h | 2012-04-25 14:40 | 2012-04-26 09:40 | 228 | 0d | Jessica Pupillo; Ignacio Cardenas | 4h | 184 |
| 231 | 1.2.2.2.2.5.2.2 | Correo electrónico |  | 2h | 2012-04-26 09:40 | 2012-04-26 11:40 | 230 | 0d | Jessica Pupillo; Ignacio Cardenas | 4h | 184 |
| 232 | 1.2.2.2.2.5.3 | **Pruebas** |  | 1.17d | 2012-04-26 11:40 | 2012-04-27 13:40 | 229 | 0d |  | 7h | 266 |
| 233 | 1.2.2.2.2.5.3.1 | Pruebas Unitarias |  | 3h | 2012-04-26 11:40 | 2012-04-26 15:40 | 231 | 0d | Wilmer Soto | 3h | 114 |
| 234 | 1.2.2.2.2.5.3.2 | Pruebas Funcionales |  | 3h | 2012-04-26 15:40 | 2012-04-27 11:40 | 233 | 0d | Wilmer Soto | 3h | 114 |
| 235 | 1.2.2.2.2.5.3.3 | Pruebas de rendimiento |  | 1h | 2012-04-27 11:40 | 2012-04-27 13:40 | 234 | 0d | Wilmer Soto | 1h | 38 |
| 236 | 1.2.2.2.2.5.4 | Fin de Notificaciones | milestone | 0d | 2012-04-27 13:40 | 2012-04-27 13:40 | 235 | 0d |  |  |  |
| 237 | 1.2.2.2.2.6 | **Módulo Documentos** |  | 15d | 2012-04-27 15:40 | 2012-05-21 15:40 | 224 | 0d |  | 138h | 6,012 |
| 238 | 1.2.2.2.2.6.1 | **Adjunto Documentos** |  | 3d | 2012-04-27 15:40 | 2012-05-03 15:40 | 62 | 0d |  | 36h | 1,656 |
| 239 | 1.2.2.2.2.6.1.1 | Desarrollo de Adjunto de Documentos |  | 18h | 2012-04-27 15:40 | 2012-05-03 15:40 | 62 | 0d | Jessica Pupillo; Ignacio Cardenas | 36h | 1,656 |
| 240 | 1.2.2.2.2.6.2 | **Llenado de Formularios** |  | 5d | 2012-05-03 15:40 | 2012-05-10 15:40 | 238 | 0d |  | 60h | 2,760 |
| 241 | 1.2.2.2.2.6.2.1 | Diseño y desarrollo de Formularios |  | 30h | 2012-05-03 15:40 | 2012-05-10 15:40 | 239 | 0d | Jessica Pupillo; Ignacio Cardenas | 60h | 2,760 |
| 242 | 1.2.2.2.2.6.3 | **Pruebas** |  | 7d | 2012-05-10 15:40 | 2012-05-21 15:40 | 240 | 0d |  | 42h | 1,596 |
| 243 | 1.2.2.2.2.6.3.1 | Pruebas Unitarias |  | 18h | 2012-05-10 15:40 | 2012-05-15 15:40 | 241 | 0d | Wilmer Soto | 18h | 684 |
| 244 | 1.2.2.2.2.6.3.2 | Pruebas Funcionales |  | 18h | 2012-05-15 15:40 | 2012-05-18 15:40 | 243 | 0d | Wilmer Soto | 18h | 684 |
| 245 | 1.2.2.2.2.6.3.3 | Pruebas de rendimiento |  | 6h | 2012-05-18 15:40 | 2012-05-21 15:40 | 244 | 0d | Wilmer Soto | 6h | 228 |
| 246 | 1.2.2.2.2.6.4 | Fin Documentos | milestone | 0d | 2012-05-21 15:40 | 2012-05-21 15:40 | 245 | 0d |  |  |  |
| 247 | 1.2.2.2.2.7 | **Módulo Encuesta** |  | 1.17d | 2012-05-22 11:20 | 2012-05-23 13:20 | 237 | 0d |  | 9h | 384 |
| 248 | 1.2.2.2.2.7.1 | Diseño Encuesta |  | 2h | 2012-05-22 11:20 | 2012-05-22 14:20 | 64 | 0d | Solsire Torres | 2h | 86 |
| 249 | 1.2.2.2.2.7.2 | Envío de correo electrónico con encuesta |  | 2h | 2012-05-22 14:20 | 2012-05-23 09:20 | 248 | 0d | Jessica Pupillo; Ignacio Cardenas | 4h | 184 |
| 250 | 1.2.2.2.2.7.3 | **Pruebas** |  | 0.5d | 2012-05-23 09:20 | 2012-05-23 13:20 | 249 | 0d |  | 3h | 114 |
| 251 | 1.2.2.2.2.7.3.1 | Pruebas Unitarias |  | 1h | 2012-05-23 09:20 | 2012-05-23 10:20 | 249 | 0d | Wilmer Soto | 1h | 38 |
| 252 | 1.2.2.2.2.7.3.2 | Pruebas Funcionales |  | 1h | 2012-05-23 10:20 | 2012-05-23 11:20 | 251 | 0d | Wilmer Soto | 1h | 38 |
| 253 | 1.2.2.2.2.7.3.3 | Pruebas de rendimiento |  | 1h | 2012-05-23 11:20 | 2012-05-23 13:20 | 252 | 0d | Wilmer Soto | 1h | 38 |
| 254 | 1.2.2.2.2.7.4 | Fin Encuestas | milestone | 0d | 2012-05-23 13:20 | 2012-05-23 13:20 | 253 | 0d |  |  |  |
| 255 | 1.2.2.2.2.8 | Fin Gestión de Citas | milestone | 0d | 2012-05-23 13:20 | 2012-05-23 13:20 | 254 | 0d |  |  |  |
| 256 | 1.2.2.2.3 | Fin Desarollo del Mecanismo | milestone | 0d | 2012-05-23 13:20 | 2012-05-23 13:20 | 255 | 0d |  |  |  |
| 257 | 1.2.2.3 | Fin Segunda Etapa | milestone | 0d | 2012-05-23 13:20 | 2012-05-23 13:20 | 256 | 0d |  |  |  |

| ID | WBS | Task | Type | Duration | Start | Finish | Predecessors | Total slack | Free slack | Resources | Work | Cost |
| --- | --- | --- | --- | --- | --- | --- | --- | --- | --- | --- | --- | --- |
| 258 | 1.2.3 | **Tercera Etapa** |  | 4.75d | 2012-05-24 14:20 | 2012-05-31 11:50 | 129 | 0d |  |  | 55h | 2,530 |
| 259 | 1.2.3.1 | **Capacitación** |  | 4.75d | 2012-05-24 14:20 | 2012-05-31 11:50 | 257 | 0d |  |  | 55h | 2,530 |
| 260 | 1.2.3.1.1 | **Capacitación Chat en Línea** |  | 3d | 2012-05-24 14:20 | 2012-05-29 14:20 | 79 | 0d |  |  | 18h | 828 |
| 261 | 1.2.3.1.1.1 | Elaboración de Manual de Uso |  | 6h | 2012-05-24 14:20 | 2012-05-25 14:20 | 79 | 0d |  | Jessica Pupillo | 6h | 276 |
| 262 | 1.2.3.1.1.2 | Capacitación Operadores Call Center |  | 12h | 2012-05-25 14:20 | 2012-05-29 14:20 | 261 | 0d |  | Jessica Pupillo | 12h | 552 |
| 263 | 1.2.3.1.2 | Fin de Capacitación Chat en Línea | milestone | 0d | 2012-05-29 14:20 | 2012-05-29 14:20 | 262 | 0d |  |  |  |  |
| 264 | 1.2.3.1.3 | **Capacitación Gestión de Citas** |  | 4.75d | 2012-05-24 14:20 | 2012-05-31 11:50 | 79 | 0d |  |  | 37h | 1,702 |
| 265 | 1.2.3.1.3.1 | Elaboración de Manual de uso |  | 18h | 2012-05-24 14:20 | 2012-05-29 14:20 | 79 | 0.08d | 0d | Ignacio Cardenas | 18h | 828 |
| 266 | 1.2.3.1.3.2 | **Capacitación Agentes Bancarios** |  | 1.75d | 2012-05-29 14:20 | 2012-05-31 11:50 | 265 | 0d |  |  | 19h | 874 |
| 267 | 1.2.3.1.3.2.1 | Agencia El Rosal |  | 3h | 2012-05-29 14:20 | 2012-05-30 10:20 | 265 | 0.25d | 0d | Ignacio Cardenas | 3h | 138 |
| 268 | 1.2.3.1.3.2.2 | Agencia Altamira |  | 3h | 2012-05-30 10:20 | 2012-05-30 14:20 | 267 | 0.25d | 0d | Ignacio Cardenas | 3h | 138 |
| 269 | 1.2.3.1.3.2.3 | Agencia Cumbres de Curumo |  | 3h | 2012-05-30 14:20 | 2012-05-31 10:20 | 268 | 0.25d |  | Ignacio Cardenas | 3h | 138 |
| 270 | 1.2.3.1.3.2.4 | Agencia Santa Fe |  | 3h | 2012-05-29 14:50 | 2012-05-30 10:50 | 81 | 0d |  | Jessica Pupillo | 3h | 138 |
| 271 | 1.2.3.1.3.2.5 | Agencia Boleita |  | 4h | 2012-05-30 10:50 | 2012-05-30 15:50 | 270 | 0d |  | Jessica Pupillo | 4h | 184 |
| 272 | 1.2.3.1.3.2.6 | Agencia Oficina Principal |  | 3h | 2012-05-30 15:50 | 2012-05-31 11:50 | 271 | 0d |  | Jessica Pupillo | 3h | 138 |
| 273 | 1.2.3.1.3.3 | Fin de Capacitación Gestión de Citas | milestone | 0d | 2012-05-31 11:50 | 2012-05-31 11:50 | 266 | 0d |  |  |  |  |
| 274 | 1.2.3.1.4 | Fin Capacitación | milestone | 0d | 2012-05-31 11:50 | 2012-05-31 11:50 | 273 | 2.29d | 0d |  |  |  |
| 275 | 1.2.3.2 | Fin Tercera Etapa | milestone | 0d | 2012-05-31 11:50 | 2012-05-31 11:50 | 274 | 2.29d |  |  |  |  |
| 276 | 1.2.4 | **Cuarta Etapa** |  | 17.72d | 2012-06-04 14:35 | 2012-06-28 11:55 | 258 | 0d |  |  | 192h | 8,832 |
| 277 | 1.2.4.1 | **Implementación** |  | 0d | 2012-06-04 14:35 | 2012-06-04 14:35 | 275 | 0d |  |  |  |  |
| 278 | 1.2.4.1.1 | Puesta en Producción Chat en Línea | milestone | 0d | 2012-06-04 14:35 | 2012-06-04 14:35 | 88 | 0d |  | Ignacio Cardenas; Jessica Pupillo |  |  |
| 279 | 1.2.4.1.2 | Puesta en Producción Gestión de Citas | milestone | 0d | 2012-06-04 14:35 | 2012-06-04 14:35 | 88 | 0d |  | Ignacio Cardenas; Jessica Pupillo |  |  |
| 280 | 1.2.4.2 | **Post - Implementación** |  | 17.72d | 2012-06-04 14:35 | 2012-06-28 11:55 | 277 | 0d |  |  | 192h | 8,832 |
| 281 | 1.2.4.2.1 | Captación de errores y casos no contemplados Chat en Línea |  | 18h | 2012-06-04 14:35 | 2012-06-07 14:35 | 277 | 0d |  | Ignacio Cardenas; Jessica Pupillo | 36h | 1,656 |
| 282 | 1.2.4.2.2 | Captación de errores y casos no contemplados Gestion de Citas |  | 30h | 2012-06-07 15:35 | 2012-06-14 15:35 | 92 | 0d |  | Ignacio Cardenas; Jessica Pupillo | 60h | 2,760 |
| 283 | 1.2.4.2.3 | Corección de errores y casos no contemplados Chat en Línea |  | 18h | 2012-06-18 11:55 | 2012-06-21 11:55 | 98 | 0d |  | Ignacio Cardenas; Jessica Pupillo | 36h | 1,656 |
| 284 | 1.2.4.2.4 | Corección de errores y casos no contemplados Gestión de Citas |  | 30h | 2012-06-21 11:55 | 2012-06-28 11:55 | 283 | 0d |  | Ignacio Cardenas; Jessica Pupillo | 60h | 2,760 |
| 285 | 1.2.4.2.5 | Puesta en producción con errores corregidos Chat en Línea | milestone | 0d | 2012-06-28 11:55 | 2012-06-28 11:55 | 284 | 0d |  | Ignacio Cardenas; Jessica Pupillo |  |  |
| 286 | 1.2.4.2.6 | Puestra en producción Gestión de Citas | milestone | 0d | 2012-06-28 11:55 | 2012-06-28 11:55 | 285 | 0d |  | Ignacio Cardenas; Jessica Pupillo |  |  |
| 287 | 1.2.4.3 | Fin Cuarta Etapa | milestone | 0d | 2012-06-28 11:55 | 2012-06-28 11:55 | 286 | 0d |  |  |  |  |

| ID | WBS | Task | Type | Duration | Start | Finish | Predecessors | Total slack | Free slack | Resources | Work | Cost |
| --- | --- | --- | --- | --- | --- | --- | --- | --- | --- | --- | --- | --- |
| 288 | 1.2.5 | **Quinta Etapa** |  | 6.58d | 2012-08-13 14:55 | 2012-08-22 11:25 | 276 | 0d |  |  | 201h | 4,824 |
| 289 | 1.2.5.1 | **Evaluación de la Productividad** |  | 6.58d | 2012-08-13 14:55 | 2012-08-22 11:25 | 276 | 0d |  |  | 201h | 4,824 |
| 290 | 1.2.5.1.1 | **Toma de Medidas** |  | 6.17d | 2012-08-13 14:55 | 2012-08-21 15:55 | 276 | 0d |  |  | 197h | 4,728 |
| 291 | 1.2.5.1.1.1 | Totalización solicitudes de chat en Línea atendidas |  | 1h | 2012-08-13 14:55 | 2012-08-13 15:55 | 103 | 0d |  | Luis Alfaro | 1h | 24 |
| 292 | 1.2.5.1.1.2 | **Medición tiempo espera Operaciones de Atención al cliente** |  | 5d | 2012-08-13 15:55 | 2012-08-20 15:55 | 291 | 0d |  |  | 180h | 4,320 |
| 293 | 1.2.5.1.1.2.1 | Agencia el Rosal |  | 30h | 2012-08-13 15:55 | 2012-08-20 15:55 | 291 | 0d |  | Daniel Conde | 30h | 720 |
| 294 | 1.2.5.1.1.2.2 | Agencia Altamira |  | 30h | 2012-08-13 15:55 | 2012-08-20 15:55 | 291 | 0d |  | Francisco Tiapa | 30h | 720 |
| 295 | 1.2.5.1.1.2.3 | Agencia Cumbres de Curumo |  | 30h | 2012-08-13 15:55 | 2012-08-20 15:55 | 291 | 0d |  | Jesús Miranda | 30h | 720 |
| 296 | 1.2.5.1.1.2.4 | Agencia Santa Fe |  | 30h | 2012-08-13 15:55 | 2012-08-20 15:55 | 291 | 0d |  | Johan Colina | 30h | 720 |
| 297 | 1.2.5.1.1.2.5 | Agencia Boleita |  | 30h | 2012-08-13 15:55 | 2012-08-20 15:55 | 291 | 0d |  | Luis Alfaro | 30h | 720 |
| 298 | 1.2.5.1.1.2.6 | Agencia Oficina Principal |  | 30h | 2012-08-13 15:55 | 2012-08-20 15:55 | 291 | 0d |  | Luis Laurenco | 30h | 720 |
| 299 | 1.2.5.1.1.3 | Totalización mediciones tiempo espera Operaciones de Atención al cliente |  | 2h | 2012-08-20 15:55 | 2012-08-21 10:55 | 292 | 0d |  | Johan Colina; Luis Laurenco | 4h | 96 |
| 300 | 1.2.5.1.1.4 | Comparación de medidas y obtención de conclusiones |  | 4h | 2012-08-21 10:55 | 2012-08-21 15:55 | 299 | 0d |  | Francisco Tiapa; Jesús Miranda; Daniel Conde | 12h | 288 |
| 301 | 1.2.5.1.1.5 | Fin Toma de Medidas | milestone | 0d | 2012-08-21 15:55 | 2012-08-21 15:55 | 300 | 0d |  |  |  |  |
| 302 | 1.2.5.1.2 | Totalización Resultados de encuestas |  | 2h | 2012-08-22 09:25 | 2012-08-22 11:25 | 106 | 2.33d | 0d | Luis Laurenco; Luis Alfaro | 4h | 96 |
| 303 | 1.2.5.1.3 | Fin Evaluación de la Productividad | milestone | 0d | 2012-08-22 11:25 | 2012-08-22 11:25 | 302 | 2.33d | 0d |  |  |  |
| 304 | 1.2.5.2 | Fin Quinta Etapa | milestone | 0d | 2012-08-22 11:25 | 2012-08-22 11:25 | 303 | 2.33d | 0d |  |  |  |
| 305 | 1.2.6 | Fin Mecanismo en Línea Banco Mercantil | milestone | 0d | 2012-08-22 11:25 | 2012-08-22 11:25 | 304 | 2.33d |  |  |  |  |
